# پروژه تقاطع غير همسطح شاهنامه 11-4-404

Schedule from MS Project, 2025-08-02 to 2026-07-23, status date 2025-10-02, costs in تومان, A marks actual dates.

## Calendars

- هفت روز کاری بدون تعطیلی: Mon-Sun 08:00-13:00, 14:00-17:00.

## Resources

| Resource | Group | Rate |
| --- | --- | --- |
| آرماتور |  | 66150 |
| حفاری |  | 9000000 |
| بتن مگر |  | 2500000 |
| بتن 300 |  | 3200000 |
| بتن 400 |  | 3800000 |
| گروت |  | 507824 |
| قالب بندی جداول |  | 400000 |
| قالب بندی دیوار و ستون |  | 900000 |
| قالب بندی تابلیه |  | 900000 |
| قالب بندی تابلیه پل |  | 1700000 |
| عایقکاری |  | 266766 |
| آهن آلات |  | 140000 |
| سند بلاست |  | 6000 |
| نقاشی آهن آلات |  | 10797 |
| نقاشی نرده |  | 4866 |
| پی کنی با دست |  | 400000 |
| پی کنی با ماشین |  | 300000 |
| ماکادام |  | 2100000 |
| درناژ |  | 514614 |
| نئوپرن |  | 1520120 |
| میل مهار |  | 102902 |
| ورق گالوانیزه |  | 110000 |
| لوله فولادی |  | 105660 |
| کف پوش بتنی پیش ساخته |  | 500000 |
| ماسه سیمان |  | 92756 |
| ملات پودر سنگ و سیمان |  | 6991 |
| بتن پوکه |  | 1600000 |
| جدول بتنی |  | 10000000 |
| کانیو |  | 9368429 |
| زیر اساس |  | 650000 |
| اساس |  | 1200000 |
| آسفالت بیندر |  | 70000 |
| آسفالت توپکا |  | 75000 |
| قیر محلول |  | 60000 |
| لوله پلاستیکی |  | 732710 |
| درز انبساط الاستومری |  | 24293127 |
| خط کشی |  | 34280 |
| تابلو اطلاعاتی |  | 7000000 |
| خاکبرداری |  | 130000 |
| تونان |  | 500000 |
| بسترکوبی |  | 5000 |
| تخریب بتن |  | 2047305 |
| برچیدن جدول |  | 800000 |
| برش آسفالت |  | 30000 |
| تخریب آسفالت |  | 60000 |
| دیوار چینی |  | 970185 |
| کول گذاری |  | 1645417 |
| بندکشی |  | 4000 |
| حفرچاه |  | 1913969 |
| سنگ ریزی |  | 535990 |
| دریچه نانو کامپوزیت |  | 5019149 |
| واتراستاپ |  | 401191 |
| کفپوش بتنی پیش ساخته |  | 600000 |
| بریدن درخت |  | 350000 |
| جابجایی درخت |  | 2500000 |
| روتبال چمن و فضای سبز |  | 264465 |
| روتبال درختچه |  | 404962 |
| تخریب مجسمه |  | 882058948 |
| کانال کنی |  | 202687 |
| قالب بندی فونداسیون |  | 650000 |
| تجهیز اولیه |  | 3140000000 |
| تجهیز مستمر |  | 12565115391 |
| دستگاه اسپیرال زن | 1 |  |
| آبپاش | 1 |  |
| بیل مکانیکی | 1 |  |
| پمپ دکل | 1 |  |
| ترک میکسر | 1 |  |
| جرثقیل 10 تن | 1 |  |
| جرثقیل 30 تن | 1 |  |
| دستگاه برش آرماتور | 1 |  |
| دستگاه حفار | 1 |  |
| دستگاه خم آرماتور | 1 |  |
| غلطک | 1 |  |
| غلطک آهنی | 1 |  |
| غلطک لاستیکی | 1 |  |
| فینیشر | 1 |  |
| قیرپاش | 1 |  |
| کامیون | 1 |  |
| گریدر | 1 |  |
| لودر | 1 |  |

## Schedule

| ID | WBS | Task | Type | Duration | Start | Finish | Predecessors | Complete | Remaining | Total slack | Free slack | Constraint | Resources | Work | Actual work | Cost | Actual cost | تاریخ شروع | تاریخ پایان | احجام |
| --- | --- | --- | --- | --- | --- | --- | --- | --- | --- | --- | --- | --- | --- | --- | --- | --- | --- | --- | --- | --- |
| 1 | 1 | **روژه احداث پل** |  | 355d | 2025-08-02 A | 2026-07-23 |  | 30% | 248.77d | 0d |  |  |  | 39080h | 12410.2h | 365,730,884,784 | 106,114,248,706.22 | 1404/5/18 | 1405/5/1 |  |
| 2 | 1.1 | شروع | milestone | 0d | 2025-08-09 A | 2025-08-09 A |  | 100% |  |  |  | start no earlier than 2025-08-09 |  |  |  |  |  | 1404/5/18 | 1404/5/18 |  |
| 3 | 1.2 | تحویل زمین | milestone | 0d | 2025-08-09 A | 2025-08-09 A | 2 | 100% |  |  |  | finish no earlier than 2025-06-12 |  |  |  |  |  | 1404/5/18 | 1404/5/18 |  |
| 4 | 1.3 | ابلاغ نقشه ها | milestone | 0d | 2025-08-09 A | 2025-08-09 A | 3 | 100% |  |  |  | start no earlier than 2025-04-21 |  |  |  |  |  | 1404/5/18 | 1404/5/18 |  |
| 5 | 1.4 | **تجهیز کارگاه** |  | 313.16d | 2025-08-09 A | 2026-06-18 |  | 21% | 247.23d | 30d |  | start no earlier than 2025-04-21 |  |  |  | 15,705,115,391 | 4,892,563,098.03 | 1404/5/18 | 1405/3/28 |  |
| 6 | 1.4.1 | تجهیزکارگاه اولیه |  | 30d | 2025-08-09 A | 2025-09-07 A | 4 | 100% |  |  |  | start no earlier than 2025-04-21 | تجهیز اولیه |  |  | 3,140,000,000 | 3,140,000,000 | 1404/5/18 | 1404/6/16 |  |
| 7 | 1.4.2 | تجهیز کارگاه مستمر |  | 300d | 2025-08-22 A | 2026-06-18 | 6 | 13% | 260.53d | 30d |  | start no earlier than 2025-04-21 | تجهیز مستمر |  |  | 12,565,115,391 | 1,752,563,098.03 | 1404/6/17 | 1405/3/28 |  |
| 8 | 1.5 | **اجرای عملیات سیویل** |  | 191d | 2025-08-02 A | 2026-02-09 |  | 47% | 100.45d | 164d |  | start no earlier than 2025-04-21 |  | 13696h | 6267.97h | 74,402,118,791 | 33,495,516,519.97 | 1404/5/18 | 1404/11/20 |  |
| 9 | 1.5.1 | **تخریب** |  | 40d | 2025-08-09 A | 2025-09-17 A |  | 100% |  |  |  | start no earlier than 2025-04-21 |  |  |  | 7,946,492,298 | 7,946,492,298 | 1404/5/18 | 1404/6/26 |  |
| 10 | 1.5.1.1 | گرفتن تایید انحراف ترافیک | milestone | 0d | 2025-08-09 A | 2025-08-09 A | 4 | 100% |  |  |  | start no earlier than 2025-06-12 |  |  |  |  |  | 1404/5/18 | 1404/5/18 |  |
| 11 | 1.5.1.2 | تخریب جداول و کانیو مسیر |  | 30d | 2025-08-19 A | 2025-09-17 A | 6SS+10d, 10 | 100% |  |  |  | start no earlier than 2025-04-21 | برچیدن جدول [353811%] |  |  | 5,660,176,000 | 5,660,176,000 | 1404/5/28 | 1404/6/26 | 3538.11 |
| 12 | 1.5.1.3 | برچیدن معارضین موجود در مسیر |  | 10d | 2025-08-24 A | 2025-09-02 A | 11SS+5d | 100% |  |  |  | start no earlier than 2025-04-21 | تخریب مجسمه |  |  | 882,058,948 | 882,058,948 | 1404/6/2 | 1404/6/11 |  |
| 13 | 1.5.1.4 | گرفتن مجوز جهت روتبال | milestone | 0d | 2025-08-09 A | 2025-08-09 A | 4 | 100% |  |  |  |  |  |  |  |  |  | 1404/5/18 | 1404/5/18 |  |
| 14 | 1.5.1.5 | روتبال و جابجایی درختان |  | 30d | 2025-08-09 A | 2025-09-07 A | 13SS | 100% |  |  |  | start no earlier than 2025-05-06 | جابجایی درخت [48500%]; بریدن درخت [15000%]; روتبال چمن و فضای سبز [45000%]; روتبال درختچه [5000%] |  |  | 1,404,257,350 | 1,404,257,350 | 1404/5/18 | 1404/6/16 | 635 |
| 15 | 1.5.2 | **اجرای کانال های بتنی هدایت آب** |  | 145d | 2025-08-02 A | 2025-12-25 |  | 42% | 84.07d | 210d |  | start no earlier than 2025-04-21 |  | 10592h | 5027.97h | 36,057,964,564 | 18,899,421,303.97 | 1404/5/28 | 1404/10/4 |  |
| 16 | 1.5.2.1 | کانال کنی |  | 50d | 2025-08-22 A | 2025-10-11 | 6, 10 | 84% | 8.16d | 285d | 0d | start no earlier than 2025-04-21 | کانال کنی [751640%]; بسترکوبی [395600%]; بیل مکانیکی; کامیون | 800h | 669.5h | 1,543,256,567 | 1,291,506,409.27 | 1404/6/17 | 1404/7/19 | 7516.4 |
| 17 | 1.5.2.2 | اجرای بتن مگر |  | 50d | 2025-08-25 A | 2025-10-14 | 16SS+3d | 78% | 11.16d | 282d | 0d | start no earlier than 2025-04-21 | بتن مگر [32680%]; ترک میکسر | 400h | 310.75h | 817,000,000 | 634,703,470.83 | 1404/6/20 | 1404/7/22 | 326.8 |
| 18 | 1.5.2.3 | آرماتور بندی فونداسیون |  | 60d | 2025-08-27 A | 2025-10-26 | 17SS+2d | 61% | 23.16d | 270d | 0d | start no earlier than 2025-04-21 | آرماتور; دستگاه برش آرماتور; دستگاه خم آرماتور | 960h | 589.5h | 6,544,577,372 | 4,018,756,818.26 | 1404/6/22 | 1404/8/4 | 98935.41 |
| 19 | 1.5.2.4 | قالب بندی فونداسیون و اجرای واتراستاپ بین فونداسیون و دیوار |  | 60d | 2025-09-03 A | 2025-11-02 | 18SS+7d | 50% | 30.16d | 263d | 0d | start no earlier than 2025-04-21 | قالب بندی فونداسیون [51600%]; واتراستاپ [7875%] |  |  | 366,993,791 | 182,539,908.22 | 1404/6/29 | 1404/8/11 | 516 |
| 20 | 1.5.2.5 | بتن ریزی فونداسیون |  | 60d | 2025-09-10 A | 2025-11-09 | 19SS+7d | 38% | 37.16d | 256d | 0d | start no earlier than 2025-04-21 | بتن 300 [92880%]; پمپ دکل; ترک میکسر [300%] | 1920h | 730.99h | 2,972,160,000 | 1,131,577,680 | 1404/7/5 | 1404/8/18 | 928.8 |
| 21 | 1.5.2.6 | آرماتور بندی دیوار |  | 75d | 2025-09-17 A | 2025-12-01 | 20SS+7d | 21% | 59.16d | 234d | 0d | start no earlier than 2025-04-21 | آرماتور; دستگاه برش آرماتور; دستگاه خم آرماتور | 1200h | 253.5h | 5,453,814,146 | 1,152,103,088.86 | 1404/7/12 | 1404/9/10 | 82446.17 |
| 22 | 1.5.2.7 | قالب بندی دیوار |  | 75d | 2025-10-02 A | 2025-12-16 | 21SS+15d | 1% | 74.16d | 219d | 0d | start no earlier than 2025-04-21 | قالب بندی دیوار و ستون [464400%]; واتراستاپ [7875%] |  |  | 4,211,193,791 | 47,364,232.39 | 1404/7/27 | 1404/9/25 | 4644 |
| 23 | 1.5.2.8 | بتن ریزی دیوار |  | 75d | 2025-10-09 | 2025-12-23 | 22SS+7d |  |  | 139d | 0d | start no earlier than 2025-04-21 | قالب بندی دیوار و ستون [77400%]; پمپ دکل; ترک میکسر [300%] | 2400h |  | 696,600,000 |  | 1404/8/4 | 1404/10/2 | 744 |
| 24 | 1.5.2.9 | اجرای بتن پیش ساخته دال |  | 70d | 2025-08-02 A | 2025-10-11 | 4SS+10d | 88% | 8.16d | 203d | 64d | start no earlier than 2025-04-21 | آرماتور; بتن 300; پمپ دکل; ترک میکسر [200%]; جرثقیل 10 تن; دستگاه برش آرماتور; دستگاه خم آرماتور | 2800h | 2473.74h | 11,838,737,372 | 10,440,869,696.13 | 1404/5/28 | 1404/7/19 | 98935.41 |
| 25 | 1.5.2.10 | نصب بتن پیش ساخته دال |  | 10d | 2025-12-14 | 2025-12-24 | 23FS-9d, 24 |  |  | 139d | 0d | start no earlier than 2025-04-21 | بتن 300 [92880%]; جرثقیل 10 تن | 80h |  |  |  | 1404/10/10 | 1404/10/3 | 928.8 |
| 26 | 1.5.2.11 | تهیه و اجرای دریچه نانو کامپوزیت |  | 5d | 2025-12-20 | 2025-12-25 | 25SS+6d |  |  | 164d | 25d | start no earlier than 2025-05-22 | دریچه نانو کامپوزیت [5700%] |  |  | 286,091,493 |  | 1404/10/16 | 1404/10/4 | 57 |
| 27 | 1.5.2.12 | پرکردن اطراف کانال با سنگ قلوه |  | 2d | 2025-12-23 | 2025-12-25 | 25SS+9d |  |  | 139d | 0d | start no earlier than 2025-04-21 | سنگ ریزی [247680%]; لودر; کامیون | 32h |  | 1,327,540,032 |  | 1404/10/19 | 1404/10/4 | 2476.8 |

| ID | WBS | Task | Duration | Start | Finish | Predecessors | Complete | Remaining | Total slack | Free slack | Constraint | Resources | Work | Actual work | Cost | Actual cost | تاریخ شروع | تاریخ پایان | احجام |
| --- | --- | --- | --- | --- | --- | --- | --- | --- | --- | --- | --- | --- | --- | --- | --- | --- | --- | --- | --- |
| 28 | 1.5.3 | **احداث رود سرویس ها** | 164.16d | 2025-08-29 A | 2026-02-09 |  | 44% | 92.12d | 139d |  | start no earlier than 2025-04-21 |  | 3104h | 1240h | 30,397,661,929 | 6,649,602,918 | 1404/6/7 | 1404/11/20 |  |
| 29 | 1.5.3.1 | **رود سرویس سمت بیمارستان** | 35d | 2025-08-29 A | 2025-10-02 A |  | 100% |  |  |  |  |  | 1240h | 1240h | 6,649,602,918 | 6,649,602,918 | 1404/6/7 | 1404/7/10 |  |
| 30 | 1.5.3.1.1 | **عملیات خاکی** | 21d | 2025-08-29 A | 2025-09-18 A |  | 100% |  |  |  |  |  | 656h | 656h | 755,055,828 | 755,055,828 | 1404/6/7 | 1404/6/27 |  |
| 31 | 1.5.3.1.1.1 | تخریب و جمع آوری آسفالت و بتن و جدول | 5d | 2025-08-29 A | 2025-09-02 A | 11SS+10d, 14SS+10d, 12SS | 100% |  |  |  | start no earlier than 2025-06-05 | تخریب بتن [960%]; برش آسفالت [106180%]; تخریب آسفالت [121840%]; بیل مکانیکی | 40h | 40h | 124,612,128 | 124,612,128 | 1404/6/7 | 1404/6/11 | 1218.4 |
| 32 | 1.5.3.1.1.2 | خاکبرداری | 5d | 2025-08-31 A | 2025-09-04 A | 31SS+2d | 100% |  |  |  | start no earlier than 2025-06-05 | خاکبرداری [292649%]; لودر; کامیون | 80h | 80h | 380,443,700 | 380,443,700 | 1404/6/9 | 1404/6/13 | 2926.49 |
| 33 | 1.5.3.1.1.3 | آماده سازی بستر | 4d | 2025-09-03 A | 2025-09-06 A | 32SS+3d | 100% |  |  |  | start no earlier than 2025-04-21 | بسترکوبی; گریدر | 32h | 32h | 50,000,000 | 50,000,000 | 1404/6/12 | 1404/6/15 | 10000 |
| 34 | 1.5.3.1.1.4 | خاکریزی | 7d | 2025-09-05 A | 2025-09-11 A | 33SS+2d | 100% |  |  |  | start no earlier than 2025-04-21 | تونان [30000%]; لودر; کامیون; بیل مکانیکی; غلطک; آبپاش | 280h | 280h | 150,000,000 | 150,000,000 | 1404/6/14 | 1404/6/20 | 300 |
| 35 | 1.5.3.1.1.5 | اجرای سابگرید | 7d | 2025-09-12 A | 2025-09-18 A | 34SS+7d | 100% |  |  |  | start no earlier than 2025-04-21 | تونان [10000%]; کامیون; گریدر; غلطک; آبپاش | 224h | 224h | 50,000,000 | 50,000,000 | 1404/6/21 | 1404/6/27 | 100 |
| 36 | 1.5.3.1.2 | **اجرای جدول تک و کانیو** | 10d | 2025-09-23 A | 2025-10-02 A |  | 100% |  |  |  |  |  | 80h | 80h | 1,397,047,090 | 1,397,047,090 | 1404/7/1 | 1404/7/10 |  |
| 37 | 1.5.3.1.2.1 | پی کنی | 2d | 2025-09-23 A | 2025-09-24 A | 43SS | 100% |  |  |  | start no earlier than 2025-04-21 | پی کنی با ماشین [24368%]; بیل مکانیکی; کامیون; لودر | 32h | 32h | 73,104,000 | 73,104,000 | 1404/7/1 | 1404/7/2 | 243.68 |
| 38 | 1.5.3.1.2.2 | قالب بندی جهت بتن مگر | 4d | 2025-09-25 A | 2025-09-28 A | 37 | 100% |  |  |  | start no earlier than 2025-04-21 | قالب بندی فونداسیون [29486%] |  |  | 191,659,000 | 191,659,000 | 1404/7/3 | 1404/7/6 | 294.86 |
| 39 | 1.5.3.1.2.3 | اجرای جدول تک و کانیو | 6d | 2025-09-26 A | 2025-10-01 A | 38SS+1d | 100% |  |  |  | start no earlier than 2025-04-21 | جدول بتنی [7843%]; بتن 300 [5092%]; بتن مگر [6684%]; ترک میکسر | 48h | 48h | 1,114,344,000 | 1,114,344,000 | 1404/7/4 | 1404/7/9 | 66.84 |
| 40 | 1.5.3.1.2.4 | بند کشی | 2d | 2025-10-01 A | 2025-10-02 A | 39FS-1d | 100% |  |  |  | start no earlier than 2025-04-21 | ماسه سیمان [11690%]; ملات پودر سنگ و سیمان [101515%] |  |  | 17,940,090 | 17,940,090 | 1404/7/9 | 1404/7/10 | 1015.15 |
| 41 | 1.5.3.1.3 | **اجرای روسازی** | 15d | 2025-09-18 A | 2025-10-02 A |  | 100% |  |  |  |  |  | 504h | 504h | 4,497,500,000 | 4,497,500,000 | 1404/6/27 | 1404/7/10 |  |
| 42 | 1.5.3.1.3.1 | اجرای زیر اساس | 7d | 2025-09-18 A | 2025-09-24 A | 35SS+6d | 100% |  |  |  | start no earlier than 2025-04-21 | زیر اساس [150000%]; گریدر; لودر; کامیون; آبپاش | 224h | 224h | 975,000,000 | 975,000,000 | 1404/6/27 | 1404/7/2 | 1500 |
| 43 | 1.5.3.1.3.2 | اجرای اساس | 5d | 2025-09-23 A | 2025-09-27 A | 42SS+5d | 100% |  |  |  | start no earlier than 2025-04-21 | اساس [150000%]; کامیون; گریدر; لودر; آبپاش | 160h | 160h | 1,800,000,000 | 1,800,000,000 | 1404/7/1 | 1404/7/5 | 1500 |
| 44 | 1.5.3.1.3.3 | اجرای پرایمکت | 2d | 2025-09-29 A | 2025-09-30 A | 43FS+1d | 100% |  |  |  | start no earlier than 2025-04-21 | قیر محلول [800000%]; قیرپاش | 16h | 16h | 480,000,000 | 480,000,000 | 1404/7/7 | 1404/7/8 | 8000 |
| 45 | 1.5.3.1.3.4 | اجرای بیندر | 2d | 2025-10-01 A | 2025-10-02 A | 44FS+2d | 100% |  |  |  | start no earlier than 2025-04-21 | آسفالت بیندر [800000%]; فینیشر; غلطک لاستیکی; غلطک آهنی | 48h | 48h | 560,000,000 | 560,000,000 | 1404/7/11 | 1404/7/10 | 8000 |
| 46 | 1.5.3.1.3.5 | اجرای تک کت | 1d | 2025-10-02 A | 2025-10-02 A | 45 | 100% |  |  |  | start no earlier than 2025-04-21 | قیر محلول [200000%]; قیرپاش | 8h | 8h | 120,000,000 | 120,000,000 | 1404/7/13 | 1404/7/10 | 2000 |
| 47 | 1.5.3.1.3.6 | اجرای توپکا | 2d | 2025-10-01 A | 2025-10-02 A | 46 | 100% |  |  |  | start no earlier than 2025-04-21 | آسفالت توپکا [750000%]; فینیشر; غلطک آهنی; غلطک لاستیکی | 48h | 48h | 562,500,000 | 562,500,000 | 1404/7/14 | 1404/7/10 | 7500 |
| 48 | 1.5.3.2 | **رود سرویس شاهنامه** | 46d | 2025-12-25 | 2026-02-09 |  |  |  | 139d |  | start no earlier than 2025-08-26 |  | 1864h |  | 23,748,059,011 |  | 1404/10/21 | 1404/11/20 |  |
| 49 | 1.5.3.2.1 | **عملیات خاکی** | 27d | 2025-12-25 | 2026-01-21 |  |  |  | 139d |  | start no earlier than 2025-04-21 |  | 1192h |  | 1,729,450,759 |  | 1404/10/21 | 1404/11/1 |  |
| 50 | 1.5.3.2.1.1 | تخریب و جمع آوری آسفالت و جدول | 5d | 2025-12-25 | 2025-12-30 | 27, 12SS |  |  | 139d | 0d | start no earlier than 2025-08-26 | تخریب بتن [18534%]; برش آسفالت [245457%]; تخریب آسفالت [486600%]; لودر; کامیون | 80h |  | 745,044,609 |  | 1404/10/21 | 1404/10/9 | 4866 |
| 51 | 1.5.3.2.1.2 | خاکبرداری | 5d | 2025-12-27 | 2026-01-01 | 50SS+2d |  |  | 139d | 0d | start no earlier than 2025-08-26 | خاکبرداری [474027%]; لودر; کامیون | 80h |  | 616,235,100 |  | 1404/10/23 | 1404/10/11 | 4740.27 |
| 52 | 1.5.3.2.1.3 | آماده سازی بستر | 4d | 2025-12-30 | 2026-01-03 | 51SS+3d |  |  | 139d | 0d | start no earlier than 2025-08-26 | بسترکوبی; گریدر | 32h |  | 68,171,050 |  | 1404/10/26 | 1404/10/13 | 13634.21 |
| 53 | 1.5.3.2.1.4 | خاکریزی | 17d | 2026-01-01 | 2026-01-18 | 52SS+2d |  |  | 139d | 0d | start no earlier than 2025-04-21 | تونان [40000%]; گریدر; غلطک; کامیون; لودر; آبپاش | 680h |  | 200,000,000 |  | 1404/10/28 | 1404/10/28 | 400 |
| 54 | 1.5.3.2.1.5 | اجرای سابگرید | 8d | 2026-01-13 | 2026-01-21 | 53FS-5d |  |  | 139d | 0d | start no earlier than 2025-04-21 | تونان [20000%]; لودر; گریدر; کامیون; غلطک; آبپاش | 320h |  | 100,000,000 |  | 1404/11/10 | 1404/11/1 | 200 |

| ID | WBS | Task | Duration | Start | Finish | Predecessors | Complete | Remaining | Total slack | Free slack | Constraint | Resources | Work | Actual work | Cost | Actual cost | تاریخ شروع | تاریخ پایان | احجام |
| --- | --- | --- | --- | --- | --- | --- | --- | --- | --- | --- | --- | --- | --- | --- | --- | --- | --- | --- | --- |
| 55 | 1.5.3.2.2 | **اجرای جدول تک و کانیو** | 16d | 2026-01-24 | 2026-02-09 |  |  |  | 139d |  | start no earlier than 2025-04-21 |  | 112h |  | 5,768,947,152 |  | 1404/11/21 | 1404/11/20 |  |
| 56 | 1.5.3.2.2.1 | پی کنی | 1d | 2026-01-24 | 2026-01-25 | 62SS |  |  | 139d | 0d | start no earlier than 2025-04-21 | پی کنی با ماشین [62079%]; بیل مکانیکی; لودر; کامیون | 16h |  | 186,237,000 |  | 1404/11/21 | 1404/11/5 | 620.79 |
| 57 | 1.5.3.2.2.2 | قالب بندی پی | 5d | 2026-01-25 | 2026-01-30 | 56 |  |  | 139d | 0d | start no earlier than 2025-04-21 | قالب بندی جداول [107233%] |  |  | 428,932,000 |  | 1404/11/22 | 1404/11/10 | 1072.33 |
| 58 | 1.5.3.2.2.3 | اجرای جدول تک و کانیو | 12d | 2026-01-27 | 2026-02-08 | 57SS+2d |  |  | 139d | 0d | start no earlier than 2025-04-21 | بتن مگر [31041%]; بتن 300 [17441%]; جدول بتنی [37440%]; ترک میکسر | 96h |  | 5,078,137,000 |  | 1404/11/24 | 1404/11/19 | 374.4 |
| 59 | 1.5.3.2.2.4 | بند کشی | 2d | 2026-02-07 | 2026-02-09 | 58FS-1d |  |  | 139d |  | start no earlier than 2025-04-21 | ماسه سیمان [49258%]; ملات پودر سنگ و سیمان [428428%] |  |  | 75,641,152 |  | 1404/12/5 | 1404/11/20 | 4284.28 |
| 60 | 1.5.3.2.3 | **اجرای روسازی** | 18d | 2026-01-19 | 2026-02-06 |  |  |  | 139d |  | start no earlier than 2025-04-21 |  | 560h |  | 16,249,661,100 |  | 1404/11/16 | 1404/11/17 |  |
| 61 | 1.5.3.2.3.1 | اجرای زیر اساس | 7d | 2026-01-19 | 2026-01-26 | 54SS+6d, 26 |  |  | 139d | 0d | start no earlier than 2025-04-21 | زیر اساس [204515%]; کامیون; گریدر; غلطک; آبپاش; لودر | 280h |  | 1,329,347,500 |  | 1404/11/16 | 1404/11/6 | 2045.15 |
| 62 | 1.5.3.2.3.2 | اجرای اساس | 5d | 2026-01-24 | 2026-01-29 | 61SS+5d |  |  | 139d | 0d | start no earlier than 2025-04-21 | اساس [204515%]; غلطک; کامیون; گریدر; آبپاش | 160h |  | 2,454,180,000 |  | 1404/11/21 | 1404/11/9 | 2045.15 |
| 63 | 1.5.3.2.3.3 | اجرای پرایمکت | 2d | 2026-01-30 | 2026-02-01 | 62FS+1d |  |  | 142d | 0d | start no earlier than 2025-04-21 | قیر محلول; قیرپاش | 16h |  | 1,208,703,000 |  | 1404/11/27 | 1404/11/12 | 20145.05 |
| 64 | 1.5.3.2.3.4 | اجرای بیندر | 2d | 2026-02-01 | 2026-02-03 | 63 |  |  | 142d | 0d | start no earlier than 2025-04-21 | آسفالت بیندر; غلطک آهنی; غلطک لاستیکی; فینیشر | 48h |  | 5,191,392,500 |  | 1404/11/29 | 1404/11/14 | 74162.75 |
| 65 | 1.5.3.2.3.5 | اجرای تک کت | 1d | 2026-02-03 | 2026-02-04 | 64 |  |  | 142d | 0d | start no earlier than 2025-04-21 | قیر محلول [671501%]; قیرپاش | 8h |  | 402,900,600 |  | 1404/12/1 | 1404/11/15 | 6715.01 |
| 66 | 1.5.3.2.3.6 | اجرای توپکا | 2d | 2026-02-04 | 2026-02-06 | 65 |  |  | 142d |  | start no earlier than 2025-04-21 | آسفالت توپکا; غلطک آهنی; غلطک لاستیکی; فینیشر | 48h |  | 5,663,137,500 |  | 1404/12/2 | 1404/11/17 | 75508.5 |
| 67 | 1.6 | اصلاح هندسی بلوار شاهنامه | 20d | 2025-09-03 A | 2025-09-22 A | 11SS+15d, 10 | 100% |  |  |  | start no earlier than 2025-04-21 | خاکبرداری [56000%]; زیر اساس [24000%]; اساس [24000%]; قیر محلول [192000%]; آسفالت توپکا [960000%] |  |  | 1,352,000,000 | 1,352,000,000 | 1404/6/12 | 1404/6/31 | 9600 |
| 68 | 1.7 | **اجرای رمپ** | 287.16d | 2025-09-08 A | 2026-06-22 |  | 51% | 140.28d | 31d |  | start no earlier than 2025-04-21 |  | 5176h | 2332.74h | 17,486,416,690 | 8,828,192,450.16 | 1404/6/17 | 1405/4/1 |  |
| 69 | 1.7.1 | **A اجرای کوله محور** | 69.16d | 2025-09-08 A | 2025-11-16 |  | 58% | 29.03d | 242d |  |  |  | 1032h | 773.5h | 4,085,056,742 | 3,224,333,336.7 | 1404/6/17 | 1404/8/25 |  |
| 70 | 1.7.1.1 | پی کنی فونداسیون و تسطیح و رگلاژ کف پی | 3d | 2025-09-08 A | 2025-09-10 A | 6 | 100% |  |  |  | start no earlier than 2025-06-12 | پی کنی با دست [2873%]; پی کنی با ماشین [19392%]; بیل مکانیکی; کامیون | 48h | 48h | 69,668,000 | 69,668,000 | 1404/6/17 | 1404/6/19 | 222.65 |
| 71 | 1.7.1.2 | حفاری شمع ها | 5d | 2025-09-11 A | 2025-09-15 A | 70 | 100% |  |  |  | start no earlier than 2025-04-21 | حفرچاه [2000%]; دستگاه حفار | 40h | 40h | 38,279,380 | 38,279,380 | 1404/6/20 | 1404/6/24 | 20 |
| 72 | 1.7.1.3 | آرماتور بندی شمع ها | 5d | 2025-09-13 A | 2025-09-17 A | 71SS+2d | 100% |  |  |  | start no earlier than 2025-04-21 | آرماتور [444713%]; دستگاه برش آرماتور; دستگاه خم آرماتور; دستگاه اسپیرال زن; جرثقیل 10 تن | 160h | 160h | 294,177,650 | 294,177,650 | 1404/6/22 | 1404/6/26 | 4447.13 |
| 73 | 1.7.1.4 | بتن ریزی شمع ها | 4d | 2025-09-16 A | 2025-09-19 A | 72SS+3d | 100% |  |  |  | start no earlier than 2025-04-21 | بتن 400 [2000%]; ترک میکسر [200%]; پمپ دکل | 96h | 96h | 76,000,000 | 76,000,000 | 1404/6/25 | 1404/6/28 | 20 |
| 74 | 1.7.1.5 | اجرای بتن مگر کف فونداسیون | 1d | 2025-09-21 A | 2025-09-21 A | 73FS+1d | 100% |  |  |  | start no earlier than 2025-06-12 | بتن مگر [1485%]; ترک میکسر | 8h | 8h | 37,125,000 | 37,125,000 | 1404/6/30 | 1404/6/30 | 14.85 |
| 75 | 1.7.1.6 | آرماتوربندی فونداسیون | 10d | 2025-09-22 A | 2025-10-01 A | 74 | 100% |  |  |  | start no earlier than 2025-04-21 | آرماتور; دستگاه برش آرماتور; دستگاه خم آرماتور | 160h | 160h | 1,014,318,302 | 1,014,318,302 | 1404/6/31 | 1404/7/9 | 15333.61 |
| 76 | 1.7.1.7 | قالب بندی فونداسیون | 2d | 2025-10-01 A | 2025-10-02 A | 75 | 100% |  |  |  | start no earlier than 2025-04-21 | قالب بندی فونداسیون [6480%] |  |  | 42,120,000 | 42,120,000 | 1404/7/10 | 1404/7/10 | 64.8 |
| 77 | 1.7.1.8 | بتن ریزی فونداسیون | 1d | 2025-10-02 A | 2025-10-02 A | 76 | 100% |  |  |  | start no earlier than 2025-04-21 | بتن 400 [19392%]; ترک میکسر [200%]; پمپ دکل | 24h | 24h | 736,896,000 | 736,896,000 | 1404/7/12 | 1404/7/10 | 193.92 |
| 78 | 1.7.1.9 | آرماتوربندی دیوار کوله و برگشتی | 15d | 2025-09-18 A | 2025-10-03 | 77 | 99% | 0.16d | 242d | 0d | start no earlier than 2025-05-21 | آرماتور; دستگاه برش آرماتور; دستگاه خم آرماتور | 240h | 237.5h | 925,401,456 | 915,749,004.7 | 1404/7/13 | 1404/7/11 | 13989.44 |
| 79 | 1.7.1.10 | قالب بندی دیوارهای کوله و برگشتی | 14d | 2025-10-03 | 2025-10-17 | 78 |  |  | 242d | 0d | start no earlier than 2025-04-21 | قالب بندی دیوار و ستون [19030%] |  |  | 171,270,000 |  | 1404/7/28 | 1404/7/25 | 190.3 |
| 80 | 1.7.1.11 | بتن ریزی دیوار کوله و برگشتی | 8d | 2025-10-10 | 2025-10-18 | 79FS-7d |  |  | 242d | 0d | start no earlier than 2025-04-21 | بتن 400 [8056%]; پمپ دکل; ترک میکسر | 128h |  | 306,128,000 |  | 1404/8/5 | 1404/7/26 | 80.56 |
| 81 | 1.7.1.12 | سنگریزی پشت کوله | 2d | 2025-10-20 | 2025-10-22 | 80FS+2d |  |  | 242d | 0d | start no earlier than 2025-06-12 | ماکادام [7600%]; لودر; کامیون | 32h |  | 159,600,000 |  | 1404/8/15 | 1404/7/30 |  |
| 82 | 1.7.1.13 | اجرای بتن مگر کف فونداسیون پیش دال | 1d | 2025-11-07 | 2025-11-08 | 81SS+18d |  |  | 242d | 0d | start no earlier than 2025-06-12 | بتن مگر [528%]; ترک میکسر | 8h |  | 13,200,000 |  | 1404/9/3 | 1404/8/17 | 5.28 |
| 83 | 1.7.1.14 | آرماتوربندی پیش دال | 5d | 2025-11-08 | 2025-11-13 | 82 |  |  | 242d | 0d | start no earlier than 2025-04-21 | آرماتور [224396%]; دستگاه خم آرماتور; دستگاه برش آرماتور | 80h |  | 148,437,954 |  | 1404/9/4 | 1404/8/22 | 2243.96 |
| 84 | 1.7.1.15 | قالب بندی پیش دال | 2d | 2025-11-13 | 2025-11-15 | 83 |  |  | 242d | 0d | start no earlier than 2025-04-21 | قالب بندی فونداسیون [350%] |  |  | 2,275,000 |  | 1404/9/9 | 1404/8/24 | 3.5 |
| 85 | 1.7.1.16 | بتن ریزی پیش دال | 1d | 2025-11-15 | 2025-11-16 | 84 |  |  | 242d | 11d | start no earlier than 2025-04-21 | بتن 400 [1320%]; ترک میکسر | 8h |  | 50,160,000 |  | 1404/9/11 | 1404/8/25 | 13.2 |

| ID | WBS | Task | Duration | Start | Finish | Predecessors | Complete | Remaining | Total slack | Free slack | Constraint | Resources | Work | Actual work | Cost | Actual cost | تاریخ شروع | تاریخ پایان | احجام |
| --- | --- | --- | --- | --- | --- | --- | --- | --- | --- | --- | --- | --- | --- | --- | --- | --- | --- | --- | --- |
| 86 | 1.7.2 | **اجرای دیوار های رمپ ورودی** | 32.16d | 2025-09-18 A | 2025-10-20 |  | 74% | 8.36d | 276d |  | start no earlier than 2025-04-21 |  | 976h | 570.99h | 2,072,569,000 | 1,071,693,968.63 | 1404/7/1 | 1404/7/28 |  |
| 87 | 1.7.2.1 | پی کنی | 15d | 2025-09-18 A | 2025-10-02 A | 67 | 100% |  |  |  | start no earlier than 2025-04-21 | پی کنی با ماشین [24574%]; بیل مکانیکی | 120h | 120h | 73,722,000 | 73,722,000 | 1404/7/1 | 1404/7/10 | 245.74 |
| 88 | 1.7.2.2 | تسطیح و رگلاژ کف پی | 15d | 2025-09-18 A | 2025-10-02 A | 87SS+4d | 100% |  |  |  | start no earlier than 2025-04-21 | پی کنی با دست [7500%] |  |  | 30,000,000 | 30,000,000 | 1404/7/5 | 1404/7/10 | 75 |
| 89 | 1.7.2.3 | بتن مگر | 14d | 2025-09-19 A | 2025-10-02 A | 88SS+4d | 100% |  |  |  | start no earlier than 2025-04-21 | بتن مگر [4358%]; ترک میکسر | 112h | 112h | 108,950,000 | 108,950,000 | 1404/7/9 | 1404/7/10 | 43.58 |
| 90 | 1.7.2.4 | بتن فونداسیون | 15d | 2025-09-20 A | 2025-10-05 | 89SS+6d | 86% | 2.16d | 291d | 0d | start no earlier than 2025-04-21 | بتن 300 [19660%]; ترک میکسر [200%]; پمپ دکل | 360h | 308.25h | 629,120,000 | 538,675,262.22 | 1404/7/15 | 1404/7/13 | 196.6 |
| 91 | 1.7.2.5 | قالب بندی دیوار | 12d | 2025-09-29 A | 2025-10-11 | 90SS+9d | 32% | 8.16d | 285d | 0d | start no earlier than 2025-04-21 | قالب بندی دیوار و ستون [111129%]; جرثقیل 10 تن | 96h | 30.75h | 1,000,161,000 | 320,346,706.41 | 1404/7/24 | 1404/7/19 | 1111.29 |
| 92 | 1.7.2.6 | نصب پلیت روی دیوار | 2d | 2025-10-09 | 2025-10-11 | 91SS+10d |  |  | 221d | 0d | start no earlier than 2025-04-21 | آهن آلات [25000%] |  |  | 35,000,000 |  | 1404/8/4 | 1404/7/19 | 250 |
| 93 | 1.7.2.7 | بتن ریزی دیوار | 9d | 2025-10-11 | 2025-10-20 | 92SS+2d |  |  | 221d | 1d | start no earlier than 2025-04-21 | بتن 300 [6113%]; جرثقیل 10 تن; ترک میکسر [300%]; پمپ دکل | 288h |  | 195,616,000 |  | 1404/8/6 | 1404/7/28 | 61.13 |
| 94 | 1.7.3 | **Q اجرای کوله محور** | 76.16d | 2025-09-08 A | 2025-11-23 |  | 53% | 35.56d | 235d |  |  |  | 1016h | 645.5h | 4,085,056,742 | 3,224,333,336.7 | 1404/6/17 | 1404/9/2 |  |
| 95 | 1.7.3.1 | پی کنی فونداسیون و تسطیح و رگلاژ کف پی | 3d | 2025-09-08 A | 2025-09-10 A | 6 | 100% |  |  |  | start no earlier than 2025-06-12 | پی کنی با دست [2873%]; پی کنی با ماشین [19392%]; بیل مکانیکی; کامیون | 48h | 48h | 69,668,000 | 69,668,000 | 1404/6/17 | 1404/6/19 | 193.92 |
| 96 | 1.7.3.2 | حفاری شمع ها | 5d | 2025-09-11 A | 2025-09-15 A | 95 | 100% |  |  |  | start no earlier than 2025-04-21 | حفرچاه [2000%]; دستگاه حفار | 40h | 40h | 38,279,380 | 38,279,380 | 1404/6/20 | 1404/6/24 | 20 |
| 97 | 1.7.3.3 | آرماتور بندی شمع ها | 5d | 2025-09-13 A | 2025-09-17 A | 96SS+2d | 100% |  |  |  | start no earlier than 2025-04-21 | آرماتور [444713%]; دستگاه برش آرماتور; دستگاه خم آرماتور; دستگاه اسپیرال زن; جرثقیل 10 تن | 160h | 160h | 294,177,650 | 294,177,650 | 1404/6/22 | 1404/6/26 | 4447.13 |
| 98 | 1.7.3.4 | بتن ریزی شمع ها | 4d | 2025-09-16 A | 2025-09-19 A | 97SS+3d | 100% |  |  |  | start no earlier than 2025-04-21 | بتن 400 [2000%]; ترک میکسر [200%]; پمپ دکل | 96h | 96h | 76,000,000 | 76,000,000 | 1404/6/25 | 1404/6/28 | 20 |
| 99 | 1.7.3.5 | اجرای بتن مگر کف فونداسیون | 1d | 2025-09-21 A | 2025-09-21 A | 98FS+1d | 100% |  |  |  | start no earlier than 2025-06-12 | بتن مگر [1485%]; ترک میکسر | 8h | 8h | 37,125,000 | 37,125,000 | 1404/6/30 | 1404/6/30 | 14.85 |
| 100 | 1.7.3.6 | قالب بندی فونداسیون | 10d | 2025-09-22 A | 2025-10-01 A | 99 | 100% |  |  |  | start no earlier than 2025-04-21 | قالب بندی فونداسیون [6480%] |  |  | 42,120,000 | 42,120,000 | 1404/6/31 | 1404/7/9 | 64.8 |
| 101 | 1.7.3.7 | آرماتوربندی فونداسیون | 2d | 2025-10-01 A | 2025-10-02 A | 100 | 100% |  |  |  | start no earlier than 2025-04-21 | آرماتور; دستگاه برش آرماتور; دستگاه خم آرماتور | 32h | 32h | 1,014,318,302 | 1,014,318,302 | 1404/7/10 | 1404/7/10 | 15333.62 |
| 102 | 1.7.3.8 | بتن ریزی فونداسیون | 1d | 2025-10-02 A | 2025-10-02 A | 101 | 100% |  |  |  | start no earlier than 2025-04-21 | بتن 400 [19392%]; ترک میکسر [200%]; پمپ دکل | 24h | 24h | 736,896,000 | 736,896,000 | 1404/7/12 | 1404/7/10 | 193.92 |
| 103 | 1.7.3.9 | آرماتوربندی دیوار کوله و برگشتی | 15d | 2025-09-18 A | 2025-10-03 | 102 | 99% | 0.16d | 235d | 0d | start no earlier than 2025-05-21 | آرماتور; دستگاه برش آرماتور; دستگاه خم آرماتور | 240h | 237.5h | 925,401,456 | 915,749,004.7 | 1404/7/13 | 1404/7/11 | 13989.43 |
| 104 | 1.7.3.10 | قالب بندی دیوارهای کوله و برگشتی | 14d | 2025-10-03 | 2025-10-17 | 103 |  |  | 235d | 0d | start no earlier than 2025-04-21 | قالب بندی دیوار و ستون [19030%] |  |  | 171,270,000 |  | 1404/7/28 | 1404/7/25 | 190.3 |
| 105 | 1.7.3.11 | بتن ریزی دیوار کوله و برگشتی | 15d | 2025-10-10 | 2025-10-25 | 104FS-7d |  |  | 235d | 0d | start no earlier than 2025-04-21 | بتن 400 [8056%]; پمپ دکل; ترک میکسر | 240h |  | 306,128,000 |  | 1404/8/5 | 1404/8/3 | 80.57 |
| 106 | 1.7.3.12 | سنگریزی پشت کوله | 2d | 2025-10-27 | 2025-10-29 | 105FS+2d |  |  | 235d | 0d | start no earlier than 2025-06-12 | ماکادام [7600%]; لودر; کامیون | 32h |  | 159,600,000 |  | 1404/8/22 | 1404/8/7 | 76 |
| 107 | 1.7.3.13 | اجرای بتن مگر کف فونداسیون پیش دال | 1d | 2025-11-14 | 2025-11-15 | 106SS+18d |  |  | 235d | 0d | start no earlier than 2025-06-12 | بتن مگر [528%]; ترک میکسر | 8h |  | 13,200,000 |  | 1404/9/10 | 1404/8/24 | 5.28 |
| 108 | 1.7.3.14 | آرماتوربندی پیش دال | 5d | 2025-11-15 | 2025-11-20 | 107 |  |  | 235d | 0d | start no earlier than 2025-04-21 | آرماتور [224396%]; دستگاه خم آرماتور; دستگاه برش آرماتور | 80h |  | 148,437,954 |  | 1404/9/11 | 1404/8/29 | 2243.97 |
| 109 | 1.7.3.15 | قالب بندی پیش دال | 2d | 2025-11-20 | 2025-11-22 | 108 |  |  | 235d | 0d | start no earlier than 2025-04-21 | قالب بندی فونداسیون [350%] |  |  | 2,275,000 |  | 1404/9/16 | 1404/9/1 | 3.5 |
| 110 | 1.7.3.16 | بتن ریزی پیش دال | 1d | 2025-11-22 | 2025-11-23 | 109 |  |  | 235d | 4d | start no earlier than 2025-04-21 | بتن 400 [1320%]; ترک میکسر | 8h |  | 50,160,000 |  | 1404/9/18 | 1404/9/2 | 13.2 |

| ID | WBS | Task | Duration | Start | Finish | Predecessors | Complete | Remaining | Total slack | Free slack | Constraint | Resources | Work | Actual work | Cost | Actual cost | تاریخ شروع | تاریخ پایان | احجام |
| --- | --- | --- | --- | --- | --- | --- | --- | --- | --- | --- | --- | --- | --- | --- | --- | --- | --- | --- | --- |
| 111 | 1.7.4 | **اجرای دیوارهای رمپ خروجی** | 33.16d | 2025-09-18 A | 2025-10-21 |  | 74% | 8.57d | 275d |  |  |  | 728h | 342.75h | 2,330,918,000 | 1,307,831,808.12 | 1404/7/1 | 1404/7/29 |  |
| 112 | 1.7.4.1 | پی کنی | 15d | 2025-09-18 A | 2025-10-02 A | 67 | 100% |  |  |  | start no earlier than 2025-04-21 | پی کنی با ماشین [27737%]; بیل مکانیکی | 120h | 120h | 83,211,000 | 83,211,000 | 1404/7/1 | 1404/7/10 | 277.37 |
| 113 | 1.7.4.2 | تسطیح و رگلاژ کف پی | 15d | 2025-09-18 A | 2025-10-02 A | 112SS+4d | 100% |  |  |  | start no earlier than 2025-04-21 | پی کنی با دست [7500%] |  |  | 30,000,000 | 30,000,000 | 1404/7/5 | 1404/7/10 | 75 |
| 114 | 1.7.4.3 | بتن مگر | 14d | 2025-09-19 A | 2025-10-02 A | 113SS+4d | 100% |  |  |  | start no earlier than 2025-04-21 | بتن مگر [4919%]; ترک میکسر | 112h | 112h | 122,975,000 | 122,975,000 | 1404/7/9 | 1404/7/10 | 49.19 |
| 115 | 1.7.4.4 | بتن فونداسیون | 10d | 2025-09-23 A | 2025-10-02 A | 114SS+6d | 100% |  |  |  | start no earlier than 2025-04-21 | بتن 300 [22190%]; پمپ دکل | 80h | 80h | 710,080,000 | 710,080,000 | 1404/7/15 | 1404/7/10 | 221.9 |
| 116 | 1.7.4.5 | قالب بندی دیوار | 12d | 2025-09-29 A | 2025-10-11 | 115SS+9d | 32% | 8.16d | 285d | 0d | start no earlier than 2025-04-21 | قالب بندی دیوار و ستون [125428%]; جرثقیل 10 تن | 96h | 30.75h | 1,128,852,000 | 361,565,808.12 | 1404/7/24 | 1404/7/19 | 1254.28 |
| 117 | 1.7.4.6 | نصب پلیت روی دیوار | 2d | 2025-10-09 | 2025-10-11 | 116SS+10d |  |  | 220d | 0d | start no earlier than 2025-04-21 | آهن آلات [25000%] |  |  | 35,000,000 |  | 1404/8/4 | 1404/7/19 | 250 |
| 118 | 1.7.4.7 | بتن ریزی دیوار | 10d | 2025-10-11 | 2025-10-21 | 117SS+2d |  |  | 220d | 0d | start no earlier than 2025-04-21 | بتن 300 [6900%]; پمپ دکل; ترک میکسر [300%] | 320h |  | 220,800,000 |  | 1404/8/6 | 1404/7/29 | 69 |
| 119 | 1.7.5 | **عملیات خاکی** | 18d | 2025-10-21 | 2025-11-08 |  |  |  | 220d |  | start no earlier than 2025-04-21 |  | 800h |  | 750,000,000 |  | 1404/8/16 | 1404/8/17 |  |
| 120 | 1.7.5.1 | خاکریزی | 15d | 2025-10-21 | 2025-11-05 | 92, 93, 118 |  |  | 220d | 0d | start no earlier than 2025-04-21 | تونان [120000%]; لودر; گریدر; کامیون; آبپاش; غلطک | 600h |  | 600,000,000 |  | 1404/8/16 | 1404/8/14 | 1200 |
| 121 | 1.7.5.2 | سابگرید | 5d | 2025-11-03 | 2025-11-08 | 120FS-2d |  |  | 220d | 0d | start no earlier than 2025-04-21 | تونان [30000%]; کامیون; گریدر; لودر; آبپاش; غلطک | 200h |  | 150,000,000 |  | 1404/8/29 | 1404/8/17 | 300 |
| 122 | 1.7.6 | **اجرای جدول تک و کانیو و پیاده رو** | 24d | 2025-11-08 | 2025-12-02 |  |  |  | 220d |  | start no earlier than 2025-04-21 |  | 8h |  | 752,712,906 |  | 1404/9/4 | 1404/9/11 |  |
| 123 | 1.7.6.1 | پی کنی | 1d | 2025-11-08 | 2025-11-09 | 121 |  |  | 220d | 0d | start no earlier than 2025-04-21 | پی کنی با ماشین [5949%]; بیل مکانیکی | 8h |  | 17,847,000 |  | 1404/9/4 | 1404/8/18 | 59.49 |
| 124 | 1.7.6.2 | قالب بندی پی و بتن مگر | 10d | 2025-11-09 | 2025-11-19 | 123 |  |  | 220d | 0d | start no earlier than 2025-04-21 | قالب بندی فونداسیون [11298%] |  |  | 73,437,000 |  | 1404/9/5 | 1404/8/28 | 112.98 |
| 125 | 1.7.6.3 | اجرای جدول تک و کانیو | 10d | 2025-11-12 | 2025-11-22 | 124SS+3d |  |  | 220d | 0d | start no earlier than 2025-04-21 | جدول بتنی [4011%] |  |  | 401,100,000 |  | 1404/9/8 | 1404/9/1 | 40.11 |
| 126 | 1.7.6.4 | بند کشی | 1d | 2025-11-19 | 2025-11-20 | 125FS-3d |  |  | 220d | 0d | start no earlier than 2025-04-21 | ماسه سیمان [3948%]; ملات پودر سنگ و سیمان [35344%] |  |  | 6,132,906 |  | 1404/9/15 | 1404/8/29 | 353.44 |
| 127 | 1.7.6.5 | بتن پیاده رو | 10d | 2025-11-22 | 2025-12-02 | 126SS+3d |  |  | 220d | 0d | start no earlier than 2025-04-21 | کفپوش بتنی پیش ساخته [42366%] |  |  | 254,196,000 |  | 1404/9/18 | 1404/9/11 | 423.66 |
| 128 | 1.7.7 | **اجرای روسازی** | 8d | 2025-11-19 | 2025-11-27 |  |  |  | 231d |  | start no earlier than 2025-04-21 |  | 400h |  | 627,020,500 |  | 1404/9/15 | 1404/9/6 |  |
| 129 | 1.7.7.1 | اجرای زیر اساس | 5d | 2025-11-19 | 2025-11-24 | 124 |  |  | 231d | 0d | start no earlier than 2025-04-21 | زیر اساس [33893%]; کامیون; گریدر; آبپاش; غلطک; لودر | 200h |  | 220,304,500 |  | 1404/9/15 | 1404/9/3 | 338.93 |
| 130 | 1.7.7.2 | اجرای اساس | 5d | 2025-11-22 | 2025-11-27 | 129SS+3d |  |  | 231d | 0d | start no earlier than 2025-04-21 | اساس [33893%]; آبپاش; کامیون; گریدر; لودر; غلطک | 200h |  | 406,716,000 |  | 1404/9/18 | 1404/9/6 | 338.93 |
| 131 | 1.7.8 | **اجرای آسفالت** | 207d | 2025-11-27 | 2026-06-22 |  |  |  | 31d |  | start no earlier than 2025-04-21 |  | 216h |  | 1,882,179,800 |  | 1404/9/23 | 1405/4/1 |  |
| 132 | 1.7.8.1 | اجرای پرایمکت | 2d | 2025-11-27 | 2025-11-29 | 130, 85, 110 |  |  | 231d | 0d | start no earlier than 2025-04-21 | قیر محلول [271142%]; قیرپاش | 16h |  | 162,685,200 |  | 1404/9/23 | 1404/9/8 | 2711.42 |
| 133 | 1.7.8.2 | اجرای بیندر | 4d | 2025-11-30 | 2025-12-04 | 132FS+1d |  |  | 231d |  | start no earlier than 2025-04-21 | آسفالت بیندر; فینیشر; غلطک لاستیکی; غلطک آهنی | 96h |  | 790,832,000 |  | 1404/9/26 | 1404/9/13 | 11297.6 |
| 134 | 1.7.8.3 | اجرای تک کت | 1d | 2026-06-17 | 2026-06-18 | 311 |  |  | 22d | 0d | start no earlier than 2025-04-21 | قیر محلول [135571%]; قیرپاش | 8h |  | 81,342,600 |  | 1405/4/13 | 1405/3/28 | 1355.71 |
| 135 | 1.7.8.4 | اجرای توپکا | 4d | 2026-06-18 | 2026-06-22 | 134 |  |  | 22d |  | start no earlier than 2025-04-21 | آسفالت توپکا; غلطک آهنی; غلطک لاستیکی; فینیشر | 96h |  | 847,320,000 |  | 1405/4/14 | 1405/4/1 | 11297.6 |
| 136 | 1.7.9 | اجرای قرنیز | 3d | 2025-12-02 | 2025-12-05 | 127 |  |  | 220d | 0d | start no earlier than 2025-04-21 | بتن 300 [16946%] |  |  | 542,272,000 |  | 1404/9/28 | 1404/9/14 | 169.46 |
| 137 | 1.7.10 | اجرای هندریل فلزی | 10d | 2025-12-05 | 2025-12-15 | 136 |  |  | 220d |  | start no earlier than 2025-04-21 | آهن آلات [256165%] |  |  | 358,631,000 |  | 1404/10/1 | 1404/9/24 | 2561.65 |

| ID | WBS | Task | Duration | Start | Finish | Predecessors | Complete | Remaining | Total slack | Constraint | Resources | Work | Actual work | Cost | Actual cost | تاریخ شروع | تاریخ پایان | احجام |
| --- | --- | --- | --- | --- | --- | --- | --- | --- | --- | --- | --- | --- | --- | --- | --- | --- | --- | --- |
| 138 | 1.8 | **اجرای پل صندوقه ای بتنی** | 272.16d | 2025-09-08 A | 2026-06-07 |  | 16% | 229.24d | 46d |  |  | 17072h | 2964.74h | 88,643,412,387 | 36,327,531,373.53 | 1404/6/17 | 1405/3/17 |  |
| 139 | 1.8.1 | **اجرای ستون** | 25d | 2025-09-08 A | 2025-10-02 A |  | 100% |  |  | start no earlier than 2025-04-21 |  | 2552h | 2552h | 34,117,725,670 | 34,117,725,670 | 1404/6/17 | 1404/7/10 |  |
| 140 | 1.8.1.1 | **B اجرای ستون** | 12d | 2025-09-08 A | 2025-09-19 A |  | 100% |  |  | start no earlier than 2025-04-21 |  | 232h | 232h | 2,929,375,970 | 2,929,375,970 | 1404/6/17 | 1404/6/28 |  |
| 141 | 1.8.1.1.1 | حفاری شمع ها | 3d | 2025-09-08 A | 2025-09-10 A | 6 | 100% |  |  | start no earlier than 2025-04-21 | حفاری [7065%]; دستگاه حفار | 24h | 24h | 635,850,000 | 635,850,000 | 1404/6/17 | 1404/6/19 | 70.65 |
| 142 | 1.8.1.1.2 | آرماتور بندی شمع ها | 3d | 2025-09-11 A | 2025-09-13 A | 141 | 100% |  |  | start no earlier than 2025-04-21 | آرماتور; دستگاه برش آرماتور; دستگاه اسپیرال زن; دستگاه خم آرماتور; جرثقیل 30 تن | 96h | 96h | 1,865,430,000 | 1,865,430,000 | 1404/6/20 | 1404/6/22 | 28200 |
| 143 | 1.8.1.1.3 | بتن ریزی شمع ها | 1d | 2025-09-14 A | 2025-09-14 A | 142 | 100% |  |  | start no earlier than 2025-04-21 | بتن 400 [4197%]; پمپ دکل; ترک میکسر [300%] | 32h | 32h | 159,486,000 | 159,486,000 | 1404/6/23 | 1404/6/23 | 41.97 |
| 144 | 1.8.1.1.4 | آرماتور بندی پایه ها | 2d | 2025-09-15 A | 2025-09-16 A | 143 | 100% |  |  | start no earlier than 2025-04-21 | آرماتور [224780%]; دستگاه برش آرماتور; دستگاه اسپیرال زن; دستگاه خم آرماتور | 48h | 48h | 148,691,970 | 148,691,970 | 1404/6/24 | 1404/6/25 | 2247.8 |
| 145 | 1.8.1.1.5 | قالب بندی پایه ها | 2d | 2025-09-17 A | 2025-09-18 A | 144 | 100% |  |  | start no earlier than 2025-04-21 | قالب بندی دیوار و ستون [5378%]; جرثقیل 10 تن | 16h | 16h | 48,402,000 | 48,402,000 | 1404/6/26 | 1404/6/27 | 53.78 |
| 146 | 1.8.1.1.6 | بتن ریزی پایه ها | 1d | 2025-09-19 A | 2025-09-19 A | 145 | 100% |  |  | start no earlier than 2025-04-21 | بتن 400 [1882%]; ترک میکسر; پمپ دکل | 16h | 16h | 71,516,000 | 71,516,000 | 1404/6/28 | 1404/6/28 | 18.82 |
| 147 | 1.8.1.2 | **C اجرای ستون** | 12d | 2025-09-10 A | 2025-09-21 A |  | 100% |  |  | start no earlier than 2025-04-21 |  | 232h | 232h | 2,929,375,970 | 2,929,375,970 | 1404/6/19 | 1404/6/30 |  |
| 148 | 1.8.1.2.1 | حفاری شمع ها | 3d | 2025-09-10 A | 2025-09-12 A | 141SS+2d | 100% |  |  | start no earlier than 2025-04-21 | حفاری [7065%]; دستگاه حفار | 24h | 24h | 635,850,000 | 635,850,000 | 1404/6/19 | 1404/6/21 | 70.65 |
| 149 | 1.8.1.2.2 | آرماتور بندی شمع ها | 3d | 2025-09-13 A | 2025-09-15 A | 148 | 100% |  |  | start no earlier than 2025-04-21 | آرماتور; دستگاه برش آرماتور; دستگاه اسپیرال زن; دستگاه خم آرماتور; جرثقیل 30 تن | 96h | 96h | 1,865,430,000 | 1,865,430,000 | 1404/6/22 | 1404/6/24 | 28200 |
| 150 | 1.8.1.2.3 | بتن ریزی شمع ها | 1d | 2025-09-16 A | 2025-09-16 A | 149 | 100% |  |  | start no earlier than 2025-04-21 | بتن 400 [4197%]; پمپ دکل; ترک میکسر [300%] | 32h | 32h | 159,486,000 | 159,486,000 | 1404/6/25 | 1404/6/25 | 41.97 |
| 151 | 1.8.1.2.4 | آرماتور بندی پایه ها | 2d | 2025-09-17 A | 2025-09-18 A | 150 | 100% |  |  | start no earlier than 2025-04-21 | آرماتور [224780%]; دستگاه برش آرماتور; دستگاه اسپیرال زن; دستگاه خم آرماتور | 48h | 48h | 148,691,970 | 148,691,970 | 1404/6/26 | 1404/6/27 | 2247.8 |
| 152 | 1.8.1.2.5 | قالب بندی پایه ها | 2d | 2025-09-19 A | 2025-09-20 A | 151 | 100% |  |  | start no earlier than 2025-04-21 | قالب بندی دیوار و ستون [5378%]; جرثقیل 10 تن | 16h | 16h | 48,402,000 | 48,402,000 | 1404/6/28 | 1404/6/29 | 53.78 |
| 153 | 1.8.1.2.6 | بتن ریزی پایه ها | 1d | 2025-09-21 A | 2025-09-21 A | 152 | 100% |  |  | start no earlier than 2025-04-21 | بتن 400 [1882%]; ترک میکسر; پمپ دکل | 16h | 16h | 71,516,000 | 71,516,000 | 1404/6/30 | 1404/6/30 | 18.82 |
| 154 | 1.8.1.3 | **D اجرای ستون** | 12d | 2025-09-12 A | 2025-09-23 A |  | 100% |  |  | start no earlier than 2025-04-21 |  | 232h | 232h | 2,929,375,970 | 2,929,375,970 | 1404/6/21 | 1404/7/1 |  |
| 155 | 1.8.1.3.1 | حفاری شمع ها | 3d | 2025-09-12 A | 2025-09-14 A | 148SS+2d | 100% |  |  | start no earlier than 2025-04-21 | حفاری [7065%]; دستگاه حفار | 24h | 24h | 635,850,000 | 635,850,000 | 1404/6/21 | 1404/6/23 | 70.65 |
| 156 | 1.8.1.3.2 | آرماتور بندی شمع ها | 3d | 2025-09-15 A | 2025-09-17 A | 155 | 100% |  |  | start no earlier than 2025-04-21 | آرماتور; دستگاه برش آرماتور; دستگاه اسپیرال زن; دستگاه خم آرماتور; جرثقیل 30 تن | 96h | 96h | 1,865,430,000 | 1,865,430,000 | 1404/6/24 | 1404/6/26 | 28200 |
| 157 | 1.8.1.3.3 | بتن ریزی شمع ها | 1d | 2025-09-18 A | 2025-09-18 A | 156 | 100% |  |  | start no earlier than 2025-04-21 | بتن 400 [4197%]; پمپ دکل; ترک میکسر [300%] | 32h | 32h | 159,486,000 | 159,486,000 | 1404/6/27 | 1404/6/27 | 41.97 |
| 158 | 1.8.1.3.4 | آرماتور بندی پایه ها | 2d | 2025-09-19 A | 2025-09-20 A | 157 | 100% |  |  | start no earlier than 2025-04-21 | آرماتور [224780%]; دستگاه برش آرماتور; دستگاه اسپیرال زن; دستگاه خم آرماتور | 48h | 48h | 148,691,970 | 148,691,970 | 1404/6/28 | 1404/6/29 | 2247.8 |
| 159 | 1.8.1.3.5 | قالب بندی پایه ها | 2d | 2025-09-21 A | 2025-09-22 A | 158 | 100% |  |  | start no earlier than 2025-04-21 | قالب بندی دیوار و ستون [5378%]; جرثقیل 10 تن | 16h | 16h | 48,402,000 | 48,402,000 | 1404/6/30 | 1404/6/31 | 53.78 |
| 160 | 1.8.1.3.6 | بتن ریزی پایه ها | 1d | 2025-09-23 A | 2025-09-23 A | 159 | 100% |  |  | start no earlier than 2025-04-21 | بتن 400 [1882%]; ترک میکسر; پمپ دکل | 16h | 16h | 71,516,000 | 71,516,000 | 1404/7/1 | 1404/7/1 | 18.82 |
| 161 | 1.8.1.4 | **E اجرای ستون** | 12d | 2025-09-14 A | 2025-09-25 A |  | 100% |  |  | start no earlier than 2025-04-21 |  | 232h | 232h | 2,929,375,970 | 2,929,375,970 | 1404/6/23 | 1404/7/3 |  |
| 162 | 1.8.1.4.1 | حفاری شمع ها | 3d | 2025-09-14 A | 2025-09-16 A | 155SS+2d | 100% |  |  | start no earlier than 2025-04-21 | حفاری [7065%]; دستگاه حفار | 24h | 24h | 635,850,000 | 635,850,000 | 1404/6/23 | 1404/6/25 | 70.65 |
| 163 | 1.8.1.4.2 | آرماتور بندی شمع ها | 3d | 2025-09-17 A | 2025-09-19 A | 162 | 100% |  |  | start no earlier than 2025-04-21 | آرماتور; دستگاه برش آرماتور; دستگاه اسپیرال زن; دستگاه خم آرماتور; جرثقیل 30 تن | 96h | 96h | 1,865,430,000 | 1,865,430,000 | 1404/6/26 | 1404/6/28 | 28200 |
| 164 | 1.8.1.4.3 | بتن ریزی شمع ها | 1d | 2025-09-20 A | 2025-09-20 A | 163 | 100% |  |  | start no earlier than 2025-04-21 | بتن 400 [4197%]; پمپ دکل; ترک میکسر [300%] | 32h | 32h | 159,486,000 | 159,486,000 | 1404/6/29 | 1404/6/29 | 41.97 |
| 165 | 1.8.1.4.4 | آرماتور بندی پایه ها | 2d | 2025-09-21 A | 2025-09-22 A | 164 | 100% |  |  | start no earlier than 2025-04-21 | آرماتور [224780%]; دستگاه برش آرماتور; دستگاه اسپیرال زن; دستگاه خم آرماتور | 48h | 48h | 148,691,970 | 148,691,970 | 1404/6/30 | 1404/6/31 | 2247.8 |
| 166 | 1.8.1.4.5 | قالب بندی پایه ها | 2d | 2025-09-23 A | 2025-09-24 A | 165 | 100% |  |  | start no earlier than 2025-04-21 | قالب بندی دیوار و ستون [5378%]; جرثقیل 10 تن | 16h | 16h | 48,402,000 | 48,402,000 | 1404/7/1 | 1404/7/2 | 53.78 |
| 167 | 1.8.1.4.6 | بتن ریزی پایه ها | 1d | 2025-09-25 A | 2025-09-25 A | 166 | 100% |  |  | start no earlier than 2025-04-21 | بتن 400 [1882%]; ترک میکسر; پمپ دکل | 16h | 16h | 71,516,000 | 71,516,000 | 1404/7/3 | 1404/7/3 | 18.82 |

| ID | WBS | Task | Duration | Start | Finish | Predecessors | Complete | Constraint | Resources | Work | Actual work | Cost | Actual cost | تاریخ شروع | تاریخ پایان | احجام |
| --- | --- | --- | --- | --- | --- | --- | --- | --- | --- | --- | --- | --- | --- | --- | --- | --- |
| 168 | 1.8.1.5 | **F اجرای ستون** | 12d | 2025-09-16 A | 2025-09-27 A |  | 100% | start no earlier than 2025-04-21 |  | 232h | 232h | 2,929,375,970 | 2,929,375,970 | 1404/6/25 | 1404/7/5 |  |
| 169 | 1.8.1.5.1 | حفاری شمع ها | 3d | 2025-09-16 A | 2025-09-18 A | 162SS+2d | 100% | start no earlier than 2025-04-21 | حفاری [7065%]; دستگاه حفار | 24h | 24h | 635,850,000 | 635,850,000 | 1404/6/25 | 1404/6/27 | 70.65 |
| 170 | 1.8.1.5.2 | آرماتور بندی شمع ها | 3d | 2025-09-19 A | 2025-09-21 A | 169 | 100% | start no earlier than 2025-04-21 | آرماتور; دستگاه برش آرماتور; دستگاه اسپیرال زن; دستگاه خم آرماتور; جرثقیل 30 تن | 96h | 96h | 1,865,430,000 | 1,865,430,000 | 1404/6/28 | 1404/6/30 | 28200 |
| 171 | 1.8.1.5.3 | بتن ریزی شمع ها | 1d | 2025-09-22 A | 2025-09-22 A | 170 | 100% | start no earlier than 2025-04-21 | بتن 400 [4197%]; پمپ دکل; ترک میکسر [300%] | 32h | 32h | 159,486,000 | 159,486,000 | 1404/6/31 | 1404/6/31 | 41.97 |
| 172 | 1.8.1.5.4 | آرماتور بندی پایه ها | 2d | 2025-09-23 A | 2025-09-24 A | 171 | 100% | start no earlier than 2025-04-21 | آرماتور [224780%]; دستگاه برش آرماتور; دستگاه اسپیرال زن; دستگاه خم آرماتور | 48h | 48h | 148,691,970 | 148,691,970 | 1404/7/1 | 1404/7/2 | 2247.8 |
| 173 | 1.8.1.5.5 | قالب بندی پایه ها | 2d | 2025-09-25 A | 2025-09-26 A | 172 | 100% | start no earlier than 2025-04-21 | قالب بندی دیوار و ستون [5378%]; جرثقیل 10 تن | 16h | 16h | 48,402,000 | 48,402,000 | 1404/7/3 | 1404/7/4 | 53.78 |
| 174 | 1.8.1.5.6 | بتن ریزی پایه ها | 1d | 2025-09-27 A | 2025-09-27 A | 173 | 100% | start no earlier than 2025-04-21 | بتن 400 [1882%]; ترک میکسر; پمپ دکل | 16h | 16h | 71,516,000 | 71,516,000 | 1404/7/5 | 1404/7/5 | 18.82 |
| 175 | 1.8.1.6 | **G اجرای ستون** | 12d | 2025-09-18 A | 2025-09-29 A |  | 100% | start no earlier than 2025-04-21 |  | 232h | 232h | 2,929,375,970 | 2,929,375,970 | 1404/6/27 | 1404/7/7 |  |
| 176 | 1.8.1.6.1 | حفاری شمع ها | 3d | 2025-09-18 A | 2025-09-20 A | 169SS+2d | 100% | start no earlier than 2025-04-21 | حفاری [7065%]; دستگاه حفار | 24h | 24h | 635,850,000 | 635,850,000 | 1404/6/27 | 1404/6/29 | 70.65 |
| 177 | 1.8.1.6.2 | آرماتور بندی شمع ها | 3d | 2025-09-21 A | 2025-09-23 A | 176 | 100% | start no earlier than 2025-04-21 | آرماتور; دستگاه برش آرماتور; دستگاه اسپیرال زن; دستگاه خم آرماتور; جرثقیل 30 تن | 96h | 96h | 1,865,430,000 | 1,865,430,000 | 1404/6/30 | 1404/7/1 | 28200 |
| 178 | 1.8.1.6.3 | بتن ریزی شمع ها | 1d | 2025-09-24 A | 2025-09-24 A | 177 | 100% | start no earlier than 2025-04-21 | بتن 400 [4197%]; پمپ دکل; ترک میکسر [300%] | 32h | 32h | 159,486,000 | 159,486,000 | 1404/7/2 | 1404/7/2 | 41.97 |
| 179 | 1.8.1.6.4 | آرماتور بندی پایه ها | 2d | 2025-09-25 A | 2025-09-26 A | 178 | 100% | start no earlier than 2025-04-21 | آرماتور [224780%]; دستگاه برش آرماتور; دستگاه اسپیرال زن; دستگاه خم آرماتور | 48h | 48h | 148,691,970 | 148,691,970 | 1404/7/3 | 1404/7/4 | 2247.8 |
| 180 | 1.8.1.6.5 | قالب بندی پایه ها | 2d | 2025-09-27 A | 2025-09-28 A | 179 | 100% | start no earlier than 2025-04-21 | قالب بندی دیوار و ستون [5378%]; جرثقیل 10 تن | 16h | 16h | 48,402,000 | 48,402,000 | 1404/7/5 | 1404/7/6 | 53.78 |
| 181 | 1.8.1.6.6 | بتن ریزی پایه ها | 1d | 2025-09-29 A | 2025-09-29 A | 180 | 100% | start no earlier than 2025-04-21 | بتن 400 [1882%]; ترک میکسر; پمپ دکل | 16h | 16h | 71,516,000 | 71,516,000 | 1404/7/7 | 1404/7/7 | 18.82 |
| 182 | 1.8.1.7 | **H اجرای ستون** | 12d | 2025-09-20 A | 2025-10-01 A |  | 100% |  |  | 232h | 232h | 3,876,670,970 | 3,876,670,970 | 1404/6/29 | 1404/7/9 |  |
| 183 | 1.8.1.7.1 | حفاری شمع ها | 3d | 2025-09-20 A | 2025-09-22 A | 176SS+2d | 100% | start no earlier than 2025-04-21 | حفاری [18840%]; دستگاه حفار | 24h | 24h | 1,695,600,000 | 1,695,600,000 | 1404/6/29 | 1404/6/31 | 188.4 |
| 184 | 1.8.1.7.2 | آرماتور بندی شمع ها | 3d | 2025-09-23 A | 2025-09-25 A | 183 | 100% | start no earlier than 2025-04-21 | آرماتور; دستگاه اسپیرال زن; دستگاه برش آرماتور; دستگاه خم آرماتور; جرثقیل 30 تن | 96h | 96h | 1,752,975,000 | 1,752,975,000 | 1404/7/1 | 1404/7/3 | 26500 |
| 185 | 1.8.1.7.3 | بتن ریزی شمع ها | 1d | 2025-09-26 A | 2025-09-26 A | 184 | 100% | start no earlier than 2025-04-21 | بتن 400 [4197%]; ترک میکسر [300%]; پمپ دکل | 32h | 32h | 159,486,000 | 159,486,000 | 1404/7/4 | 1404/7/4 | 41.97 |
| 186 | 1.8.1.7.4 | آرماتور بندی پایه ها | 2d | 2025-09-27 A | 2025-09-28 A | 185 | 100% | start no earlier than 2025-04-21 | آرماتور [224780%]; دستگاه اسپیرال زن; دستگاه برش آرماتور; دستگاه خم آرماتور | 48h | 48h | 148,691,970 | 148,691,970 | 1404/7/5 | 1404/7/6 | 22477.8 |
| 187 | 1.8.1.7.5 | قالب بندی پایه ها | 2d | 2025-09-29 A | 2025-09-30 A | 186 | 100% | start no earlier than 2025-04-21 | قالب بندی دیوار و ستون [5378%]; جرثقیل 10 تن | 16h | 16h | 48,402,000 | 48,402,000 | 1404/7/7 | 1404/7/8 | 53.78 |
| 188 | 1.8.1.7.6 | بتن ریزی پایه ها | 1d | 2025-10-01 A | 2025-10-01 A | 187 | 100% | start no earlier than 2025-04-21 | بتن 400 [1882%]; ترک میکسر; پمپ دکل | 16h | 16h | 71,516,000 | 71,516,000 | 1404/7/9 | 1404/7/9 | 18.82 |
| 189 | 1.8.1.8 | **N اجرای ستون** | 11d | 2025-09-22 A | 2025-10-02 A |  | 100% |  |  | 232h | 232h | 2,929,375,970 | 2,929,375,970 | 1404/6/31 | 1404/7/10 |  |
| 190 | 1.8.1.8.1 | حفاری شمع ها | 3d | 2025-09-22 A | 2025-09-24 A | 183SS+2d | 100% | start no earlier than 2025-04-21 | حفاری [7065%]; دستگاه حفار | 24h | 24h | 635,850,000 | 635,850,000 | 1404/6/31 | 1404/7/2 | 70.65 |
| 191 | 1.8.1.8.2 | آرماتور بندی شمع ها | 3d | 2025-09-25 A | 2025-09-27 A | 190 | 100% | start no earlier than 2025-04-21 | آرماتور; دستگاه برش آرماتور; دستگاه اسپیرال زن; دستگاه خم آرماتور; جرثقیل 30 تن | 96h | 96h | 1,865,430,000 | 1,865,430,000 | 1404/7/3 | 1404/7/5 | 28200 |
| 192 | 1.8.1.8.3 | بتن ریزی شمع ها | 1d | 2025-09-28 A | 2025-09-28 A | 191 | 100% | start no earlier than 2025-04-21 | بتن 400 [4197%]; پمپ دکل; ترک میکسر [300%] | 32h | 32h | 159,486,000 | 159,486,000 | 1404/7/6 | 1404/7/6 | 46.16 |
| 193 | 1.8.1.8.4 | آرماتور بندی پایه ها | 2d | 2025-09-29 A | 2025-09-30 A | 192 | 100% | start no earlier than 2025-04-21 | آرماتور [224780%]; دستگاه برش آرماتور; دستگاه اسپیرال زن; دستگاه خم آرماتور | 48h | 48h | 148,691,970 | 148,691,970 | 1404/7/7 | 1404/7/8 | 4950.98 |
| 194 | 1.8.1.8.5 | قالب بندی پایه ها | 2d | 2025-10-01 A | 2025-10-02 A | 193 | 100% | start no earlier than 2025-04-21 | قالب بندی دیوار و ستون [5378%]; جرثقیل 10 تن | 16h | 16h | 48,402,000 | 48,402,000 | 1404/7/9 | 1404/7/10 | 55.98 |
| 195 | 1.8.1.8.6 | بتن ریزی پایه ها | 1d | 2025-10-02 A | 2025-10-02 A | 194 | 100% | start no earlier than 2025-04-21 | بتن 400 [1882%]; ترک میکسر; پمپ دکل | 16h | 16h | 71,516,000 | 71,516,000 | 1404/7/11 | 1404/7/10 | 19.59 |

| ID | WBS | Task | Duration | Start | Finish | Predecessors | Complete | Remaining | Total slack | Free slack | Constraint | Resources | Work | Actual work | Cost | Actual cost | تاریخ شروع | تاریخ پایان | احجام |
| --- | --- | --- | --- | --- | --- | --- | --- | --- | --- | --- | --- | --- | --- | --- | --- | --- | --- | --- | --- |
| 196 | 1.8.1.9 | **O اجرای ستون** | 9d | 2025-09-24 A | 2025-10-02 A |  | 100% |  |  |  |  |  | 232h | 232h | 2,929,375,970 | 2,929,375,970 | 1404/7/2 | 1404/7/10 |  |
| 197 | 1.8.1.9.1 | حفاری شمع ها | 3d | 2025-09-24 A | 2025-09-26 A | 190SS+2d | 100% |  |  |  | start no earlier than 2025-04-21 | حفاری [7065%]; دستگاه حفار | 24h | 24h | 635,850,000 | 635,850,000 | 1404/7/2 | 1404/7/4 | 70.65 |
| 198 | 1.8.1.9.2 | آرماتور بندی شمع ها | 3d | 2025-09-27 A | 2025-09-29 A | 197 | 100% |  |  |  | start no earlier than 2025-04-21 | آرماتور; دستگاه برش آرماتور; دستگاه اسپیرال زن; دستگاه خم آرماتور; جرثقیل 30 تن | 96h | 96h | 1,865,430,000 | 1,865,430,000 | 1404/7/5 | 1404/7/7 | 28200 |
| 199 | 1.8.1.9.3 | بتن ریزی شمع ها | 1d | 2025-09-30 A | 2025-09-30 A | 198 | 100% |  |  |  | start no earlier than 2025-04-21 | بتن 400 [4197%]; پمپ دکل; ترک میکسر [300%] | 32h | 32h | 159,486,000 | 159,486,000 | 1404/7/8 | 1404/7/8 | 46.17 |
| 200 | 1.8.1.9.4 | آرماتور بندی پایه ها | 2d | 2025-10-01 A | 2025-10-02 A | 199 | 100% |  |  |  | start no earlier than 2025-04-21 | آرماتور [224780%]; دستگاه برش آرماتور; دستگاه اسپیرال زن; دستگاه خم آرماتور | 48h | 48h | 148,691,970 | 148,691,970 | 1404/7/9 | 1404/7/10 | 4950.98 |
| 201 | 1.8.1.9.5 | قالب بندی پایه ها | 2d | 2025-10-01 A | 2025-10-02 A | 200 | 100% |  |  |  | start no earlier than 2025-04-21 | قالب بندی دیوار و ستون [5378%]; جرثقیل 10 تن | 16h | 16h | 48,402,000 | 48,402,000 | 1404/7/11 | 1404/7/10 | 55.98 |
| 202 | 1.8.1.9.6 | بتن ریزی پایه ها | 1d | 2025-10-02 A | 2025-10-02 A | 201 | 100% |  |  |  | start no earlier than 2025-04-21 | بتن 400 [1882%]; ترک میکسر; پمپ دکل | 16h | 16h | 71,516,000 | 71,516,000 | 1404/7/13 | 1404/7/10 | 19.58 |
| 203 | 1.8.1.10 | **P اجرای ستون** | 7d | 2025-09-26 A | 2025-10-02 A |  | 100% |  |  |  |  |  | 232h | 232h | 2,929,375,970 | 2,929,375,970 | 1404/7/4 | 1404/7/10 |  |
| 204 | 1.8.1.10.1 | حفاری شمع ها | 3d | 2025-09-26 A | 2025-09-28 A | 197SS+2d | 100% |  |  |  | start no earlier than 2025-04-21 | حفاری [7065%]; دستگاه حفار | 24h | 24h | 635,850,000 | 635,850,000 | 1404/7/4 | 1404/7/6 | 70.65 |
| 205 | 1.8.1.10.2 | آرماتور بندی شمع ها | 3d | 2025-09-29 A | 2025-10-01 A | 204 | 100% |  |  |  | start no earlier than 2025-04-21 | آرماتور; دستگاه برش آرماتور; دستگاه اسپیرال زن; دستگاه خم آرماتور; جرثقیل 30 تن | 96h | 96h | 1,865,430,000 | 1,865,430,000 | 1404/7/7 | 1404/7/9 | 28200 |
| 206 | 1.8.1.10.3 | بتن ریزی شمع ها | 1d | 2025-10-02 A | 2025-10-02 A | 205 | 100% |  |  |  | start no earlier than 2025-04-21 | بتن 400 [4197%]; پمپ دکل; ترک میکسر [300%] | 32h | 32h | 159,486,000 | 159,486,000 | 1404/7/10 | 1404/7/10 | 46.17 |
| 207 | 1.8.1.10.4 | آرماتور بندی پایه ها | 2d | 2025-10-01 A | 2025-10-02 A | 206 | 100% |  |  |  | start no earlier than 2025-04-21 | آرماتور [224780%]; دستگاه برش آرماتور; دستگاه اسپیرال زن; دستگاه خم آرماتور | 48h | 48h | 148,691,970 | 148,691,970 | 1404/7/11 | 1404/7/10 | 4950.98 |
| 208 | 1.8.1.10.5 | قالب بندی پایه ها | 2d | 2025-10-01 A | 2025-10-02 A | 207 | 100% |  |  |  | start no earlier than 2025-04-21 | قالب بندی دیوار و ستون [5378%]; جرثقیل 10 تن | 16h | 16h | 48,402,000 | 48,402,000 | 1404/7/13 | 1404/7/10 | 55.98 |
| 209 | 1.8.1.10.6 | بتن ریزی پایه ها | 1d | 2025-10-02 A | 2025-10-02 A | 208 | 100% |  |  |  | start no earlier than 2025-04-21 | بتن 400 [1882%]; ترک میکسر; پمپ دکل | 16h | 16h | 71,516,000 | 71,516,000 | 1404/7/15 | 1404/7/10 | 19.58 |
| 210 | 1.8.1.11 | **M اجرای ستون** | 5d | 2025-09-28 A | 2025-10-02 A |  | 100% |  |  |  |  |  | 232h | 232h | 3,876,670,970 | 3,876,670,970 | 1404/7/6 | 1404/7/10 |  |
| 211 | 1.8.1.11.1 | حفاری شمع ها | 3d | 2025-09-28 A | 2025-09-30 A | 204SS+2d | 100% |  |  |  | start no earlier than 2025-04-21 | حفاری [18840%]; دستگاه حفار | 24h | 24h | 1,695,600,000 | 1,695,600,000 | 1404/7/6 | 1404/7/8 | 188.4 |
| 212 | 1.8.1.11.2 | آرماتور بندی شمع ها | 3d | 2025-09-30 A | 2025-10-02 A | 211 | 100% |  |  |  | start no earlier than 2025-04-21 | آرماتور; دستگاه اسپیرال زن; دستگاه برش آرماتور; دستگاه خم آرماتور; جرثقیل 30 تن | 96h | 96h | 1,752,975,000 | 1,752,975,000 | 1404/7/9 | 1404/7/10 | 26500 |
| 213 | 1.8.1.11.3 | بتن ریزی شمع ها | 1d | 2025-10-02 A | 2025-10-02 A | 212 | 100% |  |  |  | start no earlier than 2025-04-21 | بتن 400 [4197%]; ترک میکسر [300%]; پمپ دکل | 32h | 32h | 159,486,000 | 159,486,000 | 1404/7/12 | 1404/7/10 | 46.17 |
| 214 | 1.8.1.11.4 | آرماتور بندی پایه ها | 2d | 2025-10-01 A | 2025-10-02 A | 213 | 100% |  |  |  | start no earlier than 2025-04-21 | آرماتور [224780%]; دستگاه اسپیرال زن; دستگاه برش آرماتور; دستگاه خم آرماتور | 48h | 48h | 148,691,970 | 148,691,970 | 1404/7/13 | 1404/7/10 | 4950 |
| 215 | 1.8.1.11.5 | قالب بندی پایه ها | 2d | 2025-10-01 A | 2025-10-02 A | 214 | 100% |  |  |  | start no earlier than 2025-04-21 | قالب بندی دیوار و ستون [5378%]; جرثقیل 10 تن | 16h | 16h | 48,402,000 | 48,402,000 | 1404/7/15 | 1404/7/10 | 55.98 |
| 216 | 1.8.1.11.6 | بتن ریزی پایه ها | 1d | 2025-10-02 A | 2025-10-02 A | 215 | 100% |  |  |  | start no earlier than 2025-04-21 | بتن 400 [1882%]; ترک میکسر; پمپ دکل | 16h | 16h | 71,516,000 | 71,516,000 | 1404/7/17 | 1404/7/10 | 19.58 |
| 217 | 1.8.2 | **اجرای سر ستون ها** | 34.84d | 2025-09-26 A | 2025-10-30 |  | 20% | 27.83d | -5d | 0d |  |  | 336h | 54.75h | 1,997,350,000 | 323,357,343.75 | 1404/7/21 | 1404/8/8 |  |
| 218 | 1.8.2.1 | **H اجرای سر ستون** | 17d | 2025-09-26 A | 2025-10-13 |  | 40% | 10.16d | 12.84d |  |  |  | 168h | 54.75h | 998,675,000 | 323,357,343.75 | 1404/7/21 | 1404/7/21 |  |
| 219 | 1.8.2.1.1 | قالب بندی | 8d | 2025-09-26 A | 2025-10-04 | 188FS+11d | 86% | 1.16d | 12.84d | 0d | start no earlier than 2025-04-21 | قالب بندی دیوار و ستون [42000%]; جرثقیل 10 تن | 64h | 54.75h | 378,000,000 | 323,357,343.75 | 1404/7/21 | 1404/7/12 | 420 |
| 220 | 1.8.2.1.2 | آرماتور بندی | 7d | 2025-10-04 | 2025-10-11 | 219 |  |  | 12.84d | 0d | start no earlier than 2025-04-21 | آرماتور [450000%]; جرثقیل 10 تن | 56h |  | 297,675,000 |  | 1404/7/29 | 1404/7/19 | 4500 |
| 221 | 1.8.2.1.3 | بتن ریزی | 2d | 2025-10-11 | 2025-10-13 | 220 |  |  | 12.84d |  | start no earlier than 2025-04-21 | بتن 400 [8500%]; پمپ دکل; ترک میکسر [200%] | 48h |  | 323,000,000 |  | 1404/8/6 | 1404/7/21 | 85 |

| ID | WBS | Task | Duration | Start | Finish | Predecessors | Complete | Remaining | Total slack | Free slack | Constraint | Resources | Work | Actual work | Cost | Actual cost | تاریخ شروع | تاریخ پایان | احجام |
| --- | --- | --- | --- | --- | --- | --- | --- | --- | --- | --- | --- | --- | --- | --- | --- | --- | --- | --- | --- |
| 222 | 1.8.2.2 | **M اجرای سر ستون** | 17d | 2025-10-14 | 2025-10-30 |  |  |  | -5d | 0d |  |  | 168h |  | 998,675,000 |  | 1404/7/29 | 1404/8/8 |  |
| 223 | 1.8.2.2.1 | قالب بندی | 8d | 2025-10-14 | 2025-10-21 | 216FS+11d |  |  | -5d | 0d | start no earlier than 2025-04-21 | قالب بندی دیوار و ستون [42000%]; جرثقیل 10 تن | 64h |  | 378,000,000 |  | 1404/7/29 | 1404/7/29 | 420 |
| 224 | 1.8.2.2.2 | آرماتور بندی | 7d | 2025-10-22 | 2025-10-28 | 223 |  |  | -5d | 0d | start no earlier than 2025-04-21 | آرماتور [450000%]; جرثقیل 10 تن | 56h |  | 297,675,000 |  | 1404/8/7 | 1404/8/6 | 4500 |
| 225 | 1.8.2.2.3 | بتن ریزی | 2d | 2025-10-29 | 2025-10-30 | 224 |  |  | -5d | 0d | start no earlier than 2025-04-21 | بتن 400 [8500%]; پمپ دکل; ترک میکسر [200%] | 48h |  | 323,000,000 |  | 1404/8/14 | 1404/8/8 | 85 |
| 226 | 1.8.3 | **اجرای عرشه بتنی** | 235d | 2025-09-16 A | 2026-05-09 |  | 3% | 226.87d | 75d |  | start no earlier than 2025-04-21 |  | 14080h | 357.99h | 49,791,316,811 | 1,886,448,359.78 | 1404/7/11 | 1405/2/19 |  |
| 227 | 1.8.3.1 | نصب نئوپرن ها | 8d | 2025-10-31 | 2025-11-07 | 225, 221 |  |  | -5d | 0d | start no earlier than 2025-06-06 | اساس [5000%] |  |  | 60,000,000 |  | 1404/8/16 | 1404/8/16 | 50 |
| 228 | 1.8.3.2 | قالب بندی فلزی قسمت بیرونی عرشه | 220d | 2025-09-16 A | 2026-04-24 | 153FS+11d, 146, 160, 167, 174, 181, 195FS-1d, 202FS-11d, 209FS-11d | 8% | 203.16d | 90d | 0d | start no earlier than 2025-04-21 | قالب بندی تابلیه پل [606582%]; جرثقیل 10 تن | 1760h | 134.75h | 10,311,894,000 | 789,494,619.32 | 1404/7/11 | 1405/2/4 | 6065.82 |
| 229 | 1.8.3.3 | قالب بندی چوبی قسمت مجوف | 210d | 2025-09-28 A | 2026-04-26 | 228SS+12d | 2% | 205.16d | 88d | 10d | start no earlier than 2025-06-06 | قالب بندی تابلیه پل [42000%] |  |  | 714,000,000 | 16,468,041.67 | 1404/7/23 | 1405/2/6 | 420 |
| 230 | 1.8.3.4 | آرماتور بندی | 220d | 2025-09-26 A | 2026-05-04 | 228SS+10d | 3% | 213.16d | 80d | 0d | start no earlier than 2025-04-21 | آرماتور; جرثقیل 10 تن; دستگاه برش آرماتور; دستگاه خم آرماتور | 5280h | 164.25h | 33,270,358,811 | 1,034,941,303.58 | 1404/7/21 | 1405/2/14 | 502953.27 |
| 231 | 1.8.3.5 | بتن ریزی | 220d | 2025-10-01 A | 2026-05-09 | 228SS+10d, 227SS-23d, 229SS-7d, 230SS+5d | 1% | 218.16d | 32d | 0d | start no earlier than 2025-04-21 | بتن 400 [143028%]; ترک میکسر [300%]; پمپ دکل | 7040h | 58.99h | 5,435,064,000 | 45,544,395.2 | 1404/7/26 | 1405/2/19 | 1430.28 |
| 232 | 1.8.4 | **اجرای تک لبه و کانیو و پیاده رو** | 6d | 2026-05-09 | 2026-05-15 |  |  |  | 32d |  | start no earlier than 2025-04-21 |  | 8h |  | 637,251,426 |  | 1405/3/5 | 1405/2/25 |  |
| 233 | 1.8.4.1 | قالب بندی پی | 2d | 2026-05-09 | 2026-05-11 | 231 |  |  | 32d | 0d | start no earlier than 2025-04-21 | قالب بندی فونداسیون [6682%] |  |  | 43,433,000 |  | 1405/3/5 | 1405/2/21 | 66.82 |
| 234 | 1.8.4.2 | اجرای تک لبه و کانیو | 2d | 2026-05-11 | 2026-05-13 | 233 |  |  | 32d | 0d | start no earlier than 2025-04-21 | جدول بتنی [2005%] |  |  | 200,500,000 |  | 1405/3/7 | 1405/2/23 | 20.05 |
| 235 | 1.8.4.3 | بند کشی | 1d | 2026-05-13 | 2026-05-14 | 234 |  |  | 32d | 0d | start no earlier than 2025-04-21 | ماسه سیمان [2230%]; ملات پودر سنگ و سیمان [20812%] |  |  | 3,523,426 |  | 1405/3/9 | 1405/2/24 | 208.12 |
| 236 | 1.8.4.4 | بتن پیاده رو | 1d | 2026-05-14 | 2026-05-15 | 235 |  |  | 32d | 0d | start no earlier than 2025-04-21 | بتن پوکه [8353%]; بتن مگر [2227%]; کفپوش بتنی پیش ساخته [33412%]; ترک میکسر | 8h |  | 389,795,000 |  | 1405/3/10 | 1405/2/25 | 334.12 |
| 237 | 1.8.5 | **اجرای آسفالت** | 9d | 2026-05-15 | 2026-05-24 |  |  |  | 32d |  | start no earlier than 2025-04-21 |  | 96h |  | 1,224,553,750 |  | 1405/3/11 | 1405/3/3 |  |
| 238 | 1.8.5.1 | اجرای قیر پاشی | 2d | 2026-05-15 | 2026-05-17 | 236 |  |  | 32d | 0d | start no earlier than 2025-04-21 | قیر محلول [229900%]; قیرپاش | 16h |  | 137,940,000 |  | 1405/3/11 | 1405/2/27 | 2299 |
| 239 | 1.8.5.2 | آسفالت نرمه | 3d | 2026-05-17 | 2026-05-20 | 238 |  |  | 32d | 0d | start no earlier than 2025-04-21 | آسفالت توپکا [191565%] |  |  | 143,673,750 |  | 1405/3/13 | 1405/2/30 | 1915.65 |
| 240 | 1.8.5.3 | اجرای تک کت | 1d | 2026-05-20 | 2026-05-21 | 239 |  |  | 32d | 0d | start no earlier than 2025-04-21 | قیر محلول [229900%]; قیرپاش | 8h |  | 137,940,000 |  | 1405/3/16 | 1405/2/31 | 2299 |
| 241 | 1.8.5.4 | اجرای بیندر | 3d | 2026-05-21 | 2026-05-24 | 240 |  |  | 32d | 0d | start no earlier than 2025-04-21 | آسفالت بیندر; غلطک لاستیکی; غلطک آهنی; فینیشر | 72h |  | 805,000,000 |  | 1405/3/17 | 1405/3/3 | 11500 |
| 242 | 1.8.6 | **اجرای هندریل و جانپناه** | 14d | 2026-05-24 | 2026-06-07 |  |  |  | 32d |  | start no earlier than 2025-04-21 |  |  |  | 875,214,730 |  | 1405/3/20 | 1405/3/17 |  |
| 243 | 1.8.6.1 | تهیه و اجرای قرنیز | 7d | 2026-05-24 | 2026-05-31 | 241 |  |  | 32d | 0d | start no earlier than 2025-04-21 | بتن 400 [13365%] |  |  | 507,870,000 |  | 1405/3/20 | 1405/3/10 | 133.65 |
| 244 | 1.8.6.2 | ساخت هندریل | 2d | 2026-05-31 | 2026-06-02 | 243 |  |  | 32d | 0d | start no earlier than 2025-04-21 | میل مهار [17000%]; آهن آلات [241500%] |  |  | 355,593,340 |  | 1405/3/27 | 1405/3/12 | 2585 |
| 245 | 1.8.6.3 | نصب هندریل | 3d | 2026-06-02 | 2026-06-05 | 244 |  |  | 32d | 0d | start no earlier than 2025-04-21 |  |  |  |  |  | 1405/3/29 | 1405/3/15 |  |
| 246 | 1.8.6.4 | رنگ آمیزی هندریل | 2d | 2026-06-05 | 2026-06-07 | 245 |  |  | 32d |  |  | نقاشی نرده [241500%] |  |  | 11,751,390 |  | 1405/4/1 | 1405/3/17 | 2415 |

| ID | WBS | Task | Duration | Start | Finish | Predecessors | Complete | Remaining | Total slack | Free slack | Constraint | Resources | Work | Actual work | Cost | Actual cost | تاریخ شروع | تاریخ پایان | احجام |
| --- | --- | --- | --- | --- | --- | --- | --- | --- | --- | --- | --- | --- | --- | --- | --- | --- | --- | --- | --- |
| 247 | 1.9 | **اجرای پل فلزی همراه با تابلیه بتنی** | 303.16d | 2025-09-03 A | 2026-07-03 |  | 19% | 246.44d | 6d |  |  |  | 3136h | 844.74h | 166,599,399,525 | 21,218,445,264.53 | 1404/6/17 | 1405/4/12 |  |
| 248 | 1.9.1 | **اجرای ستون** | 17.16d | 2025-09-28 A | 2025-10-15 |  | 65% | 5.93d | 70d |  |  |  | 1344h | 844.74h | 11,892,470,160 | 8,735,472,989.42 | 1404/7/9 | 1404/7/23 |  |
| 249 | 1.9.1.1 | **L اجرای ستون** | 5d | 2025-09-28 A | 2025-10-02 A |  | 100% |  |  |  |  |  | 360h | 360h | 2,973,117,540 | 2,973,117,540 | 1404/7/9 | 1404/7/10 |  |
| 250 | 1.9.1.1.1 | حفاری شمع ها | 5d | 2025-09-28 A | 2025-10-02 A | 211 | 100% |  |  |  | start no earlier than 2025-04-21 | حفاری [12363%]; دستگاه حفار | 40h | 40h | 1,112,670,000 | 1,112,670,000 | 1404/7/9 | 1404/7/10 | 123.63 |
| 251 | 1.9.1.1.2 | آرماتور بندی شمع ها | 5d | 2025-09-28 A | 2025-10-02 A | 250 | 100% |  |  |  | start no earlier than 2025-04-21 | آرماتور; جرثقیل 30 تن; دستگاه اسپیرال زن; دستگاه برش آرماتور; دستگاه خم آرماتور | 160h | 160h | 1,256,850,000 | 1,256,850,000 | 1404/7/14 | 1404/7/10 | 19000 |
| 252 | 1.9.1.1.3 | بتن ریزی شمع ها | 2d | 2025-10-01 A | 2025-10-02 A | 251 | 100% |  |  |  | start no earlier than 2025-04-21 | بتن 400 [5884%]; ترک میکسر [300%]; پمپ دکل | 64h | 64h | 223,592,000 | 223,592,000 | 1404/7/19 | 1404/7/10 | 58.84 |
| 253 | 1.9.1.1.4 | آرماتور بندی پایه ها | 2d | 2025-10-01 A | 2025-10-02 A | 252SS+1d | 100% |  |  |  | start no earlier than 2025-04-21 | آرماتور [385573%]; جرثقیل 10 تن; دستگاه اسپیرال زن; دستگاه برش آرماتور; دستگاه خم آرماتور | 64h | 64h | 255,056,540 | 255,056,540 | 1404/7/20 | 1404/7/10 | 3855.73 |
| 254 | 1.9.1.1.5 | قالب بندی پایه ها | 2d | 2025-10-01 A | 2025-10-02 A | 253 | 100% |  |  |  | start no earlier than 2025-04-21 | قالب بندی دیوار و ستون [5519%]; جرثقیل 10 تن | 16h | 16h | 49,671,000 | 49,671,000 | 1404/7/22 | 1404/7/10 | 55.19 |
| 255 | 1.9.1.1.6 | بتن ریزی پایه ها | 1d | 2025-10-02 A | 2025-10-02 A | 254 | 100% |  |  |  | start no earlier than 2025-04-21 | بتن 400 [1981%]; ترک میکسر; پمپ دکل | 16h | 16h | 75,278,000 | 75,278,000 | 1404/7/24 | 1404/7/10 | 19.81 |
| 256 | 1.9.1.2 | **K اجرای ستون** | 8.16d | 2025-09-28 A | 2025-10-06 |  | 80% | 1.61d | 75d |  |  |  | 328h | 290.99h | 2,973,117,540 | 2,828,215,679.42 | 1404/7/14 | 1404/7/14 |  |
| 257 | 1.9.1.2.1 | حفاری شمع ها | 5d | 2025-09-28 A | 2025-10-02 A | 250 | 100% |  |  |  | start no earlier than 2025-04-21 | حفاری [12363%]; دستگاه حفار | 40h | 40h | 1,112,670,000 | 1,112,670,000 | 1404/7/14 | 1404/7/10 | 123.63 |
| 258 | 1.9.1.2.2 | آرماتور بندی شمع ها | 5d | 2025-09-28 A | 2025-10-02 A | 257 | 100% |  |  |  | start no earlier than 2025-04-21 | آرماتور; جرثقیل 30 تن; دستگاه اسپیرال زن; دستگاه برش آرماتور; دستگاه خم آرماتور | 160h | 160h | 1,256,850,000 | 1,256,850,000 | 1404/7/19 | 1404/7/10 | 19000 |
| 259 | 1.9.1.2.3 | بتن ریزی شمع ها | 1d | 2025-10-02 A | 2025-10-02 A | 258 | 100% |  |  |  | start no earlier than 2025-04-21 | بتن 400 [5884%]; ترک میکسر [300%]; پمپ دکل | 32h | 32h | 223,592,000 | 223,592,000 | 1404/7/24 | 1404/7/10 | 58.83 |
| 260 | 1.9.1.2.4 | آرماتور بندی پایه ها | 2d | 2025-10-01 A | 2025-10-03 | 259FS+1d | 92% | 0.16d | 75d | 0d | start no earlier than 2025-04-21 | آرماتور [385573%]; جرثقیل 10 تن; دستگاه اسپیرال زن; دستگاه برش آرماتور; دستگاه خم آرماتور | 64h | 58.99h | 255,056,540 | 235,103,679.42 | 1404/7/26 | 1404/7/11 | 3855.73 |
| 261 | 1.9.1.2.5 | قالب بندی پایه ها | 2d | 2025-10-03 | 2025-10-05 | 260 |  |  | 75d | 0d | start no earlier than 2025-04-21 | قالب بندی دیوار و ستون [5519%]; جرثقیل 10 تن | 16h |  | 49,671,000 |  | 1404/7/28 | 1404/7/13 | 55.18 |
| 262 | 1.9.1.2.6 | بتن ریزی پایه ها | 1d | 2025-10-05 | 2025-10-06 | 261 |  |  | 75d | 0d | start no earlier than 2025-04-21 | بتن 400 [1981%]; ترک میکسر; پمپ دکل | 16h |  | 75,278,000 |  | 1404/7/30 | 1404/7/14 | 19.82 |
| 263 | 1.9.1.3 | **J اجرای ستون** | 12.16d | 2025-09-28 A | 2025-10-10 |  | 55% | 5.44d | 71d |  |  |  | 328h | 162.99h | 2,973,117,540 | 2,078,821,068.75 | 1404/7/19 | 1404/7/18 |  |
| 264 | 1.9.1.3.1 | حفاری شمع ها | 5d | 2025-09-28 A | 2025-10-02 A | 257 | 100% |  |  |  | start no earlier than 2025-04-21 | حفاری [12363%]; دستگاه حفار | 40h | 40h | 1,112,670,000 | 1,112,670,000 | 1404/7/19 | 1404/7/10 | 123.63 |
| 265 | 1.9.1.3.2 | آرماتور بندی شمع ها | 5d | 2025-09-29 A | 2025-10-04 | 264 | 77% | 1.16d | 71d | 0d | start no earlier than 2025-04-21 | آرماتور; جرثقیل 30 تن; دستگاه اسپیرال زن; دستگاه برش آرماتور; دستگاه خم آرماتور | 160h | 122.99h | 1,256,850,000 | 966,151,068.75 | 1404/7/24 | 1404/7/12 | 19000 |
| 266 | 1.9.1.3.3 | بتن ریزی شمع ها | 1d | 2025-10-04 | 2025-10-05 | 265 |  |  | 71d | 0d | start no earlier than 2025-04-21 | بتن 400 [5884%]; ترک میکسر [300%]; پمپ دکل | 32h |  | 223,592,000 |  | 1404/7/29 | 1404/7/13 | 58.83 |
| 267 | 1.9.1.3.4 | آرماتور بندی پایه ها | 2d | 2025-10-05 | 2025-10-07 | 266SS+1d |  |  | 71d | 0d | start no earlier than 2025-04-21 | آرماتور [385573%]; جرثقیل 10 تن; دستگاه اسپیرال زن; دستگاه برش آرماتور; دستگاه خم آرماتور | 64h |  | 255,056,540 |  | 1404/7/30 | 1404/7/15 | 3855.73 |
| 268 | 1.9.1.3.5 | قالب بندی پایه ها | 2d | 2025-10-07 | 2025-10-09 | 267 |  |  | 71d | 0d | start no earlier than 2025-04-21 | قالب بندی دیوار و ستون [5519%]; جرثقیل 10 تن | 16h |  | 49,671,000 |  | 1404/8/2 | 1404/7/17 | 55.18 |
| 269 | 1.9.1.3.6 | بتن ریزی پایه ها | 1d | 2025-10-09 | 2025-10-10 | 268 |  |  | 71d | 0d | start no earlier than 2025-04-21 | بتن 400 [1981%]; ترک میکسر; پمپ دکل | 16h |  | 75,278,000 |  | 1404/8/4 | 1404/7/18 | 19.82 |
| 270 | 1.9.1.4 | **I اجرای ستون** | 16d | 2025-09-29 A | 2025-10-15 |  | 24% | 12.16d | 70d |  |  |  | 328h | 30.75h | 2,973,117,540 | 855,318,701.25 | 1404/7/24 | 1404/7/23 |  |
| 271 | 1.9.1.4.1 | حفاری شمع ها | 5d | 2025-09-29 A | 2025-10-04 | 264 | 77% | 1.16d | 70d | 0d | start no earlier than 2025-04-21 | حفاری [12363%]; دستگاه حفار | 40h | 30.75h | 1,112,670,000 | 855,318,701.25 | 1404/7/24 | 1404/7/12 | 123.63 |
| 272 | 1.9.1.4.2 | آرماتور بندی شمع ها | 5d | 2025-10-04 | 2025-10-09 | 271 |  |  | 70d | 0d | start no earlier than 2025-04-21 | آرماتور; جرثقیل 30 تن; دستگاه اسپیرال زن; دستگاه برش آرماتور; دستگاه خم آرماتور | 160h |  | 1,256,850,000 |  | 1404/7/29 | 1404/7/17 | 19000 |
| 273 | 1.9.1.4.3 | بتن ریزی شمع ها | 1d | 2025-10-09 | 2025-10-10 | 272 |  |  | 70d | 0d | start no earlier than 2025-04-21 | بتن 400 [5884%]; ترک میکسر [300%]; پمپ دکل | 32h |  | 223,592,000 |  | 1404/8/4 | 1404/7/18 | 58.83 |
| 274 | 1.9.1.4.4 | آرماتور بندی پایه ها | 2d | 2025-10-10 | 2025-10-12 | 273SS+1d |  |  | 70d | 0d | start no earlier than 2025-04-21 | آرماتور [385573%]; جرثقیل 10 تن; دستگاه اسپیرال زن; دستگاه برش آرماتور; دستگاه خم آرماتور | 64h |  | 255,056,540 |  | 1404/8/5 | 1404/7/20 | 3855.73 |
| 275 | 1.9.1.4.5 | قالب بندی پایه ها | 2d | 2025-10-12 | 2025-10-14 | 274 |  |  | 70d | 0d | start no earlier than 2025-04-21 | قالب بندی دیوار و ستون [5519%]; جرثقیل 10 تن | 16h |  | 49,671,000 |  | 1404/8/7 | 1404/7/22 | 55.18 |
| 276 | 1.9.1.4.6 | بتن ریزی پایه ها | 1d | 2025-10-14 | 2025-10-15 | 275 |  |  | 70d | 0d | start no earlier than 2025-04-21 | بتن 400 [1981%]; ترک میکسر; پمپ دکل | 16h |  | 75,278,000 |  | 1404/8/9 | 1404/7/23 | 19.82 |

| ID | WBS | Task | Duration | Start | Finish | Predecessors | Complete | Remaining | Total slack | Free slack | Constraint | Resources | Work | Cost | Actual cost | تاریخ شروع | تاریخ پایان | احجام |
| --- | --- | --- | --- | --- | --- | --- | --- | --- | --- | --- | --- | --- | --- | --- | --- | --- | --- | --- |
| 277 | 1.9.2 | **اجرای سر ستون ها** | 19.16d | 2025-10-14 | 2025-11-02 |  |  |  | 70d |  |  |  | 384h | 3,994,700,000 |  | 1404/8/6 | 1404/8/11 |  |
| 278 | 1.9.2.1 | **L اجرای سر ستون** | 11d | 2025-10-14 | 2025-10-24 |  |  |  | 78.16d |  |  |  | 104h | 998,675,000 |  | 1404/8/6 | 1404/8/2 |  |
| 279 | 1.9.2.1.1 | قالب بندی | 5d | 2025-10-14 | 2025-10-18 | 255FS+11d |  |  | 78.16d | 0d | start no earlier than 2025-04-21 | قالب بندی دیوار و ستون [42000%]; جرثقیل 10 تن | 40h | 378,000,000 |  | 1404/8/6 | 1404/7/26 | 420 |
| 280 | 1.9.2.1.2 | آرماتور بندی | 5d | 2025-10-19 | 2025-10-23 | 279 |  |  | 78.16d | 0d | start no earlier than 2025-04-21 | آرماتور [450000%]; جرثقیل 10 تن | 40h | 297,675,000 |  | 1404/8/11 | 1404/8/1 | 4500 |
| 281 | 1.9.2.1.3 | بتن ریزی | 1d | 2025-10-24 | 2025-10-24 | 280 |  |  | 78.16d | 8.16d | start no earlier than 2025-04-21 | بتن 400 [8500%]; پمپ دکل; ترک میکسر [200%] | 24h | 323,000,000 |  | 1404/8/16 | 1404/8/2 | 85 |
| 282 | 1.9.2.2 | **K اجرای سر ستون** | 11d | 2025-10-17 | 2025-10-28 |  |  |  | 75d |  |  |  | 104h | 998,675,000 |  | 1404/8/12 | 1404/8/6 |  |
| 283 | 1.9.2.2.1 | قالب بندی | 5d | 2025-10-17 | 2025-10-22 | 262FS+11d |  |  | 75d | 0d | start no earlier than 2025-04-21 | قالب بندی دیوار و ستون [42000%]; جرثقیل 10 تن | 40h | 378,000,000 |  | 1404/8/12 | 1404/7/30 | 420 |
| 284 | 1.9.2.2.2 | آرماتور بندی | 5d | 2025-10-22 | 2025-10-27 | 283 |  |  | 75d | 0d | start no earlier than 2025-04-21 | آرماتور [450000%]; جرثقیل 10 تن | 40h | 297,675,000 |  | 1404/8/17 | 1404/8/5 | 4500 |
| 285 | 1.9.2.2.3 | بتن ریزی | 1d | 2025-10-27 | 2025-10-28 | 284 |  |  | 75d | 5d | start no earlier than 2025-04-21 | بتن 400 [8500%]; پمپ دکل; ترک میکسر [200%] | 24h | 323,000,000 |  | 1404/8/22 | 1404/8/6 | 85 |
| 286 | 1.9.2.3 | **J اجرای سر ستون** | 11d | 2025-10-21 | 2025-11-01 |  |  |  | 71d |  |  |  | 104h | 998,675,000 |  | 1404/8/16 | 1404/8/10 |  |
| 287 | 1.9.2.3.1 | قالب بندی | 5d | 2025-10-21 | 2025-10-26 | 269FS+11d |  |  | 71d | 0d | start no earlier than 2025-04-21 | قالب بندی دیوار و ستون [42000%]; جرثقیل 10 تن | 40h | 378,000,000 |  | 1404/8/16 | 1404/8/4 | 420 |
| 288 | 1.9.2.3.2 | آرماتور بندی | 5d | 2025-10-26 | 2025-10-31 | 287 |  |  | 71d | 0d | start no earlier than 2025-04-21 | آرماتور [450000%]; جرثقیل 10 تن | 40h | 297,675,000 |  | 1404/8/21 | 1404/8/9 | 4500 |
| 289 | 1.9.2.3.3 | بتن ریزی | 1d | 2025-10-31 | 2025-11-01 | 288 |  |  | 71d | 1d | start no earlier than 2025-04-21 | بتن 400 [8500%]; پمپ دکل; ترک میکسر [200%] | 24h | 323,000,000 |  | 1404/8/26 | 1404/8/10 | 85 |
| 290 | 1.9.2.4 | **I اجرای سر ستون** | 7d | 2025-10-26 | 2025-11-02 |  |  |  | 70d |  |  |  | 72h | 998,675,000 |  | 1404/8/21 | 1404/8/11 |  |
| 291 | 1.9.2.4.1 | قالب بندی | 3d | 2025-10-26 | 2025-10-29 | 276FS+11d |  |  | 70d | 0d | start no earlier than 2025-04-21 | قالب بندی دیوار و ستون [42000%]; جرثقیل 10 تن | 24h | 378,000,000 |  | 1404/8/21 | 1404/8/7 | 420 |
| 292 | 1.9.2.4.2 | آرماتور بندی | 3d | 2025-10-29 | 2025-11-01 | 291 |  |  | 70d | 0d | start no earlier than 2025-04-21 | آرماتور [450000%]; جرثقیل 10 تن | 24h | 297,675,000 |  | 1404/8/24 | 1404/8/10 | 4500 |
| 293 | 1.9.2.4.3 | بتن ریزی | 1d | 2025-11-01 | 2025-11-02 | 292 |  |  | 70d | 0d | start no earlier than 2025-04-21 | بتن 400 [8500%]; پمپ دکل; ترک میکسر [200%] | 24h | 323,000,000 |  | 1404/8/27 | 1404/8/11 | 85 |
| 294 | 1.9.3 | **اجرای نئوپرن** | 9d | 2025-11-09 | 2025-11-18 |  |  |  | 70d |  |  |  |  | 250,819,800 |  | 1404/9/5 | 1404/8/27 |  |
| 295 | 1.9.3.1 | تهیه نئوپرن | 1d | 2025-11-09 | 2025-11-10 | 293FS+7d, 281FS+7d, 285FS+7d, 289FS+7d |  |  | 70d | 0d | start no earlier than 2025-04-21 | نئوپرن [15000%] |  | 228,018,000 |  | 1404/9/5 | 1404/8/19 | 150 |
| 296 | 1.9.3.2 | نصب نئوپرن | 8d | 2025-11-10 | 2025-11-18 | 295 |  |  | 70d |  | start no earlier than 2025-04-21 | نئوپرن [1500%] |  | 22,801,800 |  | 1404/9/6 | 1404/8/27 | 15 |
| 297 | 1.9.4 | **اجرای عرشه فلزی** | 212.16d | 2025-09-03 A | 2026-04-03 |  | 19% | 172.53d | 0d |  |  |  |  | 140,930,696,157 | 12,482,972,275.11 | 1404/6/17 | 1405/1/14 |  |
| 298 | 1.9.4.1 | تهیه شاپ | 30d | 2025-09-03 A | 2025-10-02 A | 6 | 100% |  |  |  | start no earlier than 2025-04-21 |  |  |  |  | 1404/6/17 | 1404/7/10 |  |
| 299 | 1.9.4.2 | ساخت سازه فلزی | 128d | 2025-09-21 A | 2026-01-27 | 298 | 9% | 116.16d | 0d |  | start no earlier than 2025-04-21 | آهن آلات; سند بلاست; نقاشی آهن آلات |  | 134,910,696,157 | 12,482,972,275.11 | 1404/7/16 | 1404/11/7 | 860416.22 |
| 300 | 1.9.4.3 | مونتاژ و دمونتاژ در کارگاه و سپس مونتاژ در محل | 66d | 2026-01-27 | 2026-04-03 | 299, 296 |  |  | 0d |  | start no earlier than 2025-04-21 | آهن آلات |  | 6,020,000,000 |  | 1404/11/24 | 1405/1/14 | 43000 |

| ID | WBS | Task | Type | Duration | Start | Finish | Predecessors | Total slack | Free slack | Constraint | Resources | Work | Cost | تاریخ شروع | تاریخ پایان | احجام |
| --- | --- | --- | --- | --- | --- | --- | --- | --- | --- | --- | --- | --- | --- | --- | --- | --- |
| 301 | 1.9.5 | **اجرای تابلیه بتنی روی عرشه فلزی** |  | 57d | 2026-04-03 | 2026-05-30 |  | 0d |  |  |  | 1080h | 6,980,362,254 | 1405/1/31 | 1405/3/9 |  |
| 302 | 1.9.5.1 | قالب بندی |  | 25d | 2026-04-03 | 2026-04-28 | 300 | 0d |  | start no earlier than 2025-04-21 | ورق گالوانیزه; جرثقیل 10 تن | 200h | 2,073,629,800 | 1405/1/31 | 1405/2/8 | 18851.18 |
| 303 | 1.9.5.2 | آرماتوربندی |  | 35d | 2026-04-18 | 2026-05-23 | 302FS-10d | 0d |  | start no earlier than 2025-04-21 | آرماتور; دستگاه برش آرماتور; دستگاه خم آرماتور | 560h | 1,579,262,454 | 1405/2/15 | 1405/3/2 | 23873.96 |
| 304 | 1.9.5.3 | بتن ریزی |  | 10d | 2026-05-20 | 2026-05-30 | 303FS-3d | 0d |  | start no earlier than 2025-04-21 | بتن 400 [87565%]; ترک میکسر [300%]; پمپ دکل | 320h | 3,327,470,000 | 1405/3/16 | 1405/3/9 | 875.65 |
| 305 | 1.9.6 | **اجرای جدول تک و کانیو و پیاده رو** |  | 6d | 2026-05-30 | 2026-06-05 |  | 0d |  |  |  | 16h | 780,695,954 | 1405/3/26 | 1405/3/15 |  |
| 306 | 1.9.6.1 | قالب بندی پی |  | 3d | 2026-05-30 | 2026-06-02 | 304 | 0d |  | start no earlier than 2025-04-21 | قالب بندی فونداسیون [6075%] |  | 39,487,500 | 1405/3/26 | 1405/3/12 | 60.75 |
| 307 | 1.9.6.2 | اجرای جدول تک و کانیو |  | 2d | 2026-05-31 | 2026-06-02 | 306SS+1d | 0d |  | start no earlier than 2025-04-21 | جدول بتنی [1822%] |  | 182,200,000 | 1405/3/27 | 1405/3/12 | 18.22 |
| 308 | 1.9.6.3 | بند کشی |  | 1d | 2026-06-02 | 2026-06-03 | 307SS+2d | 0d |  | start no earlier than 2025-04-21 | ماسه سیمان [2027%]; ملات پودر سنگ و سیمان [19000%] |  | 3,208,454 | 1405/3/29 | 1405/3/13 | 190 |
| 309 | 1.9.6.4 | بتن پیاده رو |  | 2d | 2026-06-03 | 2026-06-05 | 308 | 0d |  | start no earlier than 2025-04-21 | بتن 400 [7600%]; بتن 300 [1100%]; بتن مگر [2000%]; کفپوش بتنی پیش ساخته [30300%]; ترک میکسر | 16h | 555,800,000 | 1405/3/30 | 1405/3/15 | 303 |
| 310 | 1.9.7 | **اجرای آسفالت** |  | 21d | 2026-06-05 | 2026-06-26 |  | 0d |  |  |  | 200h | 989,250,000 | 1405/4/1 | 1405/4/5 |  |
| 311 | 1.9.7.1 | اجرای قیرپاشی |  | 12d | 2026-06-05 | 2026-06-17 | 309 | 0d |  | start no earlier than 2025-04-21 | قیر محلول [180000%]; قیرپاش | 96h | 108,000,000 | 1405/4/1 | 1405/3/27 | 1800 |
| 312 | 1.9.7.2 | اجرای آسفالت نرمه |  | 4d | 2026-06-17 | 2026-06-21 | 311 | 0d |  | start no earlier than 2025-04-21 | آسفالت توپکا [175000%] |  | 131,250,000 | 1405/4/13 | 1405/3/31 | 1750 |
| 313 | 1.9.7.3 | اجرای تک کت |  | 1d | 2026-06-21 | 2026-06-22 | 312 | 0d |  | start no earlier than 2025-04-21 | قیر محلول [25000%]; قیرپاش | 8h | 15,000,000 | 1405/4/17 | 1405/4/1 | 250 |
| 314 | 1.9.7.4 | اجرای بیندر |  | 4d | 2026-06-22 | 2026-06-26 | 313 | 0d |  | start no earlier than 2025-04-21 | آسفالت بیندر; غلطک آهنی; غلطک لاستیکی; فینیشر | 96h | 735,000,000 | 1405/4/18 | 1405/4/5 | 10500 |
| 315 | 1.9.8 | **اجرای هندریل و جانپناه** |  | 9d | 2026-06-24 | 2026-07-03 |  | 2d |  |  |  | 112h | 780,405,200 | 1405/4/20 | 1405/4/12 |  |
| 316 | 1.9.8.1 | تهیه و اجرای قرنیز |  | 7d | 2026-06-26 | 2026-07-03 | 314 | 0d |  | start no earlier than 2025-04-21 | بتن 400 [12150%]; ترک میکسر [200%] | 112h | 461,700,000 | 1405/4/22 | 1405/4/12 | 121.54 |
| 317 | 1.9.8.2 | ساخت هندریل |  | 2d | 2026-06-24 | 2026-06-26 | 314SS+2d | 8d | 0d | start no earlier than 2025-04-21 | آهن آلات [220000%] |  | 308,000,000 | 1405/4/20 | 1405/4/5 | 2200 |
| 318 | 1.9.8.3 | نصب هندریل |  | 3d | 2026-06-28 | 2026-07-01 | 317SS+4d | 8d | 0d | start no earlier than 2025-04-21 |  |  |  | 1405/4/24 | 1405/4/10 |  |
| 319 | 1.9.8.4 | رنگ آمیزی هندریل |  | 2d | 2026-06-29 | 2026-07-01 | 318SS+1d | 8d |  |  | نقاشی نرده [220000%] |  | 10,705,200 | 1405/4/25 | 1405/4/10 | 2200 |
| 320 | 1.10 | **اجرای خط کشی و علایم ایمنی** |  | 21d | 2026-06-26 | 2026-07-17 |  | 0d |  | start no earlier than 2025-04-21 |  |  | 1,542,422,000 | 1405/4/22 | 1405/4/26 |  |
| 321 | 1.10.1 | ساخت تابلو |  | 15d | 2026-06-26 | 2026-07-11 | 243SS, 47SS, 40SS, 66SS, 59SS, 316SS | 0d |  | start no earlier than 2025-04-21 | تابلو اطلاعاتی [5748%] |  | 402,360,000 | 1405/4/22 | 1405/4/20 | 57.48 |
| 322 | 1.10.2 | نصب تابلو |  | 3d | 2026-07-09 | 2026-07-12 | 321FS-2d, 246, 319 | 0d |  | start no earlier than 2025-04-21 |  |  |  | 1405/5/4 | 1405/4/21 |  |
| 323 | 1.10.3 | اجرای گاردریل |  | 5d | 2026-07-09 | 2026-07-14 | 322SS | 0d |  | start no earlier than 2025-04-21 | آهن آلات [350000%]; ورق گالوانیزه [150000%] |  | 655,000,000 | 1405/5/4 | 1405/4/23 | 5000 |
| 324 | 1.10.4 | خط کشی |  | 3d | 2026-07-14 | 2026-07-17 | 323, 135 | 0d |  | start no earlier than 2025-04-21 | خط کشی |  | 485,062,000 | 1405/5/9 | 1405/4/26 | 14150 |
| 325 | 1.11 | تحویل پروژه |  | 1d | 2026-07-17 | 2026-07-18 | 324SS+3d | 0d |  | start no earlier than 2025-04-21 |  |  |  | 1405/5/12 | 1405/4/27 |  |
| 326 | 1.12 | برچیدن کارگاه |  | 5d | 2026-07-18 | 2026-07-23 | 325, 7 | 0d |  | start no earlier than 2025-04-21 |  |  |  | 1405/5/13 | 1405/5/1 |  |
| 327 | 1.13 | پایان | milestone | 0d | 2026-07-23 | 2026-07-23 | 326 | 0d |  | start no earlier than 2025-04-21 |  |  |  | 1405/5/17 | 1405/5/1 |  |
